# 移动商旅

Schedule from MS Project, 2012-03-27 to 2012-07-13, A marks actual dates.
中软国际

## Calendars

- 标准: Mon-Fri 08:00-12:00, 13:00-17:00; Sat-Sun off. Exceptions (off unless hours are given): 2012-03-31 to 2012-04-01 08:00-12:00, 13:00-17:00, 2012-04-28 08:00-12:00, 13:00-17:00, 2012-06-30 08:00-12:00, 13:00-17:00.

## Resources

| Resource |
| --- |
| 杨敏 |
| 沈航 |
| 陈栎 |
| 吴波 |
| 刘佳 |
| 付婷婷 |
| 王子楠 |
| 李阳明 |
| 付武钢 |
| 张磊磊 |
| 雷斌 |
| 张磊 |
| 曹桐军 |
| 陈成 |
| 龙垄 |
| 王立伟 |
| 李彬 |
| 唐亮 |
| 王波 |

## Schedule

| ID | WBS | Task | Type | Duration | Start | Finish | Predecessors | Complete | Remaining | Total slack | Free slack | Constraint | Resources | Work | Actual work |
| --- | --- | --- | --- | --- | --- | --- | --- | --- | --- | --- | --- | --- | --- | --- | --- |
| 1 | 1 | **移动商旅** |  | 83d? | 2012-03-27 A | 2012-07-13 |  | 1% | 81.97d? | 0d |  |  |  | 15603.2h | 307.2h |
| 2 | 1.1 | **项目启动** |  | 6d | 2012-03-27 A | 2012-04-01 A |  | 100% |  |  |  |  |  | 128h | 128h |
| 3 | 1.1.1 | 编写立项报告 |  | 2d | 2012-03-27 A | 2012-03-28 A |  | 100% |  |  |  | finish no earlier than 2012-03-28 | 杨敏 | 16h | 16h |
| 4 | 1.1.2 | 立项报告评审 |  | 1d | 2012-03-28 A | 2012-03-28 A |  | 100% |  |  |  | start no earlier than 2012-03-28 | 杨敏 | 8h | 8h |
| 5 | 1.1.3 | **项目计划编写** |  | 3d | 2012-03-29 A | 2012-03-31 A |  | 100% |  |  |  |  |  | 88h | 88h |
| 6 | 1.1.3.1 | 资源计划 |  | 2d | 2012-03-29 A | 2012-03-30 A | 4 | 100% |  |  |  | finish no earlier than 2012-03-30 | 杨敏 | 16h | 16h |
| 7 | 1.1.3.2 | 成本计划 |  | 2d | 2012-03-29 A | 2012-03-30 A | 4 | 100% |  |  |  | finish no earlier than 2012-03-30 | 杨敏 | 16h | 16h |
| 8 | 1.1.3.3 | 投入计划 |  | 2d | 2012-03-29 A | 2012-03-30 A | 4 | 100% |  |  |  | finish no earlier than 2012-03-30 | 杨敏 | 16h | 16h |
| 9 | 1.1.3.4 | 沟通计划 |  | 2d | 2012-03-29 A | 2012-03-30 A | 4 | 100% |  |  |  | finish no earlier than 2012-03-30 | 杨敏 | 16h | 16h |
| 10 | 1.1.3.5 | 质量计划 |  | 2d | 2012-03-29 A | 2012-03-30 A | 4 | 100% |  |  |  | finish no earlier than 2012-03-30 | 杨敏 | 16h | 16h |
| 11 | 1.1.3.6 | 计划评审 |  | 1d | 2012-03-31 A | 2012-03-31 A | 10, 6, 7, 8, 9 | 100% |  |  |  | start no earlier than 2012-03-31 | 杨敏 | 8h | 8h |
| 12 | 1.1.4 | **项目启动会** |  | 1d | 2012-04-01 A | 2012-04-01 A |  | 100% |  |  |  |  |  | 16h | 16h |
| 13 | 1.1.4.1 | 组建项目团队 |  | 1d | 2012-04-01 A | 2012-04-01 A |  | 100% |  |  |  | start no earlier than 2012-04-01 | 杨敏 | 8h | 8h |
| 14 | 1.1.4.2 | 项目启动会 |  | 1d | 2012-04-01 A | 2012-04-01 A |  | 100% |  |  |  | start no earlier than 2012-04-01 | 杨敏 | 8h | 8h |
| 15 | 1.2 | **需求分析** |  | 47d | 2012-03-31 A | 2012-05-31 |  | 4% | 45.29d | 32d |  |  |  | 4075.2h | 179.2h |
| 16 | 1.2.1 | **迭代1-需求分析** |  | 10d | 2012-03-31 A | 2012-04-11 |  | 56% | 4.4d | 69d |  |  |  | 331.2h | 179.2h |
| 17 | 1.2.1.1 | 项目整体需求沟通 |  | 7d | 2012-03-31 A | 2012-04-06 |  | 80% | 1.4d | 72d |  | finish no earlier than 2012-04-06 | 杨敏; 沈航; 陈栎; 吴波; 刘佳 | 235.2h | 179.2h |
| 18 | 1.2.1.2 | 定制需求功能分解清单 |  | 2d | 2012-04-09 | 2012-04-10 |  |  |  | 33d | 0d | finish no earlier than 2012-04-10 | 杨敏; 沈航; 陈栎; 吴波 | 64h |  |
| 19 | 1.2.1.3 | 需求文档评审及结果 |  | 1d | 2012-04-11 | 2012-04-11 | 18 |  |  | 33d | 0d |  | 杨敏; 沈航; 陈栎; 吴波 | 32h |  |
| 20 | 1.2.2 | 完成迭代1需求分析 | milestone | 0d | 2012-04-11 | 2012-04-11 |  |  |  | 69d |  | finish no earlier than 2012-04-11 | 杨敏 |  |  |
| 21 | 1.2.3 | **迭代2-需求变更** |  | 36d | 2012-04-13 | 2012-05-31 |  |  |  | 32d |  |  |  | 3744h |  |
| 22 | 1.2.3.1 | 需求变更跟踪 |  | 36d | 2012-04-13 | 2012-05-31 | 19 |  |  | 32d |  | finish no earlier than 2012-05-31 | 杨敏 | 288h |  |
| 23 | 1.2.3.2 | 需求变更分析 |  | 36d | 2012-04-13 | 2012-05-31 |  |  |  | 32d |  | finish no earlier than 2012-05-31 | 杨敏; 沈航; 陈栎; 吴波 | 1152h |  |
| 24 | 1.2.3.3 | 整理需求功能清单 |  | 36d | 2012-04-13 | 2012-05-31 |  |  |  | 32d |  | finish no earlier than 2012-05-31 | 杨敏; 沈航; 陈栎; 吴波 | 1152h |  |
| 25 | 1.2.3.4 | 调整开发计划 |  | 36d | 2012-04-13 | 2012-05-31 |  |  |  | 32d |  | finish no earlier than 2012-05-31 | 杨敏; 沈航; 陈栎; 吴波 | 1152h |  |
| 26 | 1.2.4 | 完成迭代2需求变更分析 | milestone | 0d | 2012-05-31 | 2012-05-31 |  |  |  | 32d |  | finish no earlier than 2012-05-31 | 杨敏 |  |  |

| ID | WBS | Task | Type | Duration | Start | Finish | Predecessors | Total slack | Free slack | Constraint | Resources | Work |
| --- | --- | --- | --- | --- | --- | --- | --- | --- | --- | --- | --- | --- |
| 27 | 1.3 | **产品设计** |  | 37d | 2012-04-12 | 2012-05-31 |  | 32d |  |  |  | 2232h |
| 28 | 1.3.1 | **迭代1-iOS平台产品设计** |  | 36d | 2012-04-12 | 2012-05-30 |  | 33d |  |  |  | 576h |
| 29 | 1.3.1.1 | **UE** |  | 19d | 2012-04-12 | 2012-05-07 |  | 50d |  |  |  | 112h |
| 30 | 1.3.1.1.1 | UE产品文档评审 |  | 2d | 2012-05-04 | 2012-05-07 | 31 | 50d |  | finish no earlier than 2012-05-07 | 刘佳 | 16h |
| 31 | 1.3.1.1.2 | UE产品文档设计 |  | 12d | 2012-04-12 | 2012-04-27 | 19 | 55d | 5d | finish no earlier than 2012-04-27 | 刘佳 | 96h |
| 32 | 1.3.1.2 | **UI** |  | 29d | 2012-04-23 | 2012-05-30 |  | 33d |  |  |  | 464h |
| 33 | 1.3.1.2.1 | UI产品效果图 |  | 29d | 2012-04-23 | 2012-05-30 |  | 33d |  | start no earlier than 2012-04-23 | 付婷婷 | 232h |
| 34 | 1.3.1.2.2 | UI产品资源图 |  | 29d | 2012-04-23 | 2012-05-30 |  | 33d |  | start no earlier than 2012-04-23 | 付婷婷 | 232h |
| 35 | 1.3.2 | 完成迭代1产品设计 | milestone | 0d | 2012-05-31 | 2012-05-31 |  | 33d |  | start no earlier than 2012-05-31 |  |  |
| 36 | 1.3.3 | **迭代2-Android平台产品设计** |  | 29d | 2012-04-23 | 2012-05-30 |  | 33d |  |  |  | 528h |
| 37 | 1.3.3.1 | **UE** |  | 7d | 2012-04-28 | 2012-05-07 |  | 50d |  |  |  | 64h |
| 38 | 1.3.3.1.1 | UE产品文档设计 |  | 6d | 2012-04-28 | 2012-05-04 | 19 | 51d |  | finish no earlier than 2012-05-04 | 刘佳 | 48h |
| 39 | 1.3.3.1.2 | UE产品文档评审 |  | 2d | 2012-05-04 | 2012-05-07 |  | 50d |  | start no earlier than 2012-05-04 | 刘佳 | 16h |
| 40 | 1.3.3.2 | **UI** |  | 29d | 2012-04-23 | 2012-05-30 |  | 33d |  |  |  | 464h |
| 41 | 1.3.3.2.1 | UI产品效果图 |  | 29d | 2012-04-23 | 2012-05-30 |  | 33d |  | start no earlier than 2012-04-23 | 付婷婷 | 232h |
| 42 | 1.3.3.2.2 | UI产品资源图 |  | 29d | 2012-04-23 | 2012-05-30 |  | 33d |  | start no earlier than 2012-04-23 | 付婷婷 | 232h |
| 43 | 1.3.4 | 完成迭代2产品设计 | milestone | 0d | 2012-05-31 | 2012-05-31 |  | 33d |  | start no earlier than 2012-05-31 |  |  |
| 44 | 1.3.5 | **迭代3-iPad产品设计** |  | 36d | 2012-04-12 | 2012-05-30 |  | 33d |  |  |  | 584h |
| 45 | 1.3.5.1 | **UE** |  | 19d | 2012-04-12 | 2012-05-07 |  | 50d |  |  |  | 120h |
| 46 | 1.3.5.1.1 | UE产品文档设计 |  | 13d | 2012-04-12 | 2012-04-28 | 19 | 54d | 4d | start no earlier than 2012-04-12 | 刘佳 | 104h |
| 47 | 1.3.5.1.2 | UE产品文档评审 |  | 2d | 2012-05-04 | 2012-05-07 | 46 | 50d |  | finish no earlier than 2012-05-07 | 刘佳 | 16h |
| 48 | 1.3.5.2 | **UI** |  | 29d | 2012-04-23 | 2012-05-30 |  | 33d |  |  |  | 464h |
| 49 | 1.3.5.2.1 | UI产品效果图 |  | 29d | 2012-04-23 | 2012-05-30 |  | 33d |  | start no earlier than 2012-04-23 | 付婷婷 | 232h |
| 50 | 1.3.5.2.2 | UI产品资源图 |  | 29d | 2012-04-23 | 2012-05-30 |  | 33d |  | start no earlier than 2012-04-23 | 付婷婷 | 232h |
| 51 | 1.3.6 | 完成迭代3产品设计 | milestone | 0d | 2012-05-31 | 2012-05-31 |  | 33d |  | start no earlier than 2012-05-31 |  |  |

| ID | WBS | Task | Type | Duration | Start | Finish | Predecessors | Total slack | Constraint | Resources | Work |
| --- | --- | --- | --- | --- | --- | --- | --- | --- | --- | --- | --- |
| 52 | 1.3.7 | **迭代4-Android Pad产品设计** |  | 29d | 2012-04-24 | 2012-05-31 |  | 32d |  |  | 544h |
| 53 | 1.3.7.1 | **UE** |  | 9d | 2012-04-26 | 2012-05-07 |  | 50d |  |  | 80h |
| 54 | 1.3.7.1.1 | UE产品文档设计 |  | 8d | 2012-04-26 | 2012-05-04 | 19 | 51d | finish no earlier than 2012-05-04 | 刘佳 | 64h |
| 55 | 1.3.7.1.2 | UE产品文档评审 |  | 2d | 2012-05-04 | 2012-05-07 |  | 50d | start no earlier than 2012-05-04 | 刘佳 | 16h |
| 56 | 1.3.7.2 | **UI** |  | 29d | 2012-04-24 | 2012-05-31 |  | 32d |  |  | 464h |
| 57 | 1.3.7.2.1 | UI产品效果图 |  | 29d | 2012-04-24 | 2012-05-31 |  | 32d | finish no earlier than 2012-05-31 | 付婷婷 | 232h |
| 58 | 1.3.7.2.2 | UI产品资源图 |  | 29d | 2012-04-24 | 2012-05-31 |  | 32d | finish no earlier than 2012-05-31 | 付婷婷 | 232h |
| 59 | 1.3.8 | 完成迭代4产品设计 | milestone | 0d | 2012-05-31 | 2012-05-31 |  | 33d | start no earlier than 2012-05-31 |  |  |
| 60 | 1.4 | **产品实现** |  | 58d? | 2012-04-11 | 2012-06-28 |  | 12d |  |  | 7304h |
| 61 | 1.4.1 | **迭代1** |  | 42d | 2012-04-11 | 2012-06-06 |  | 28d |  |  | 5704h |
| 62 | 1.4.1.1 | 定制开发计划 |  | 2d | 2012-04-11 | 2012-04-12 |  | 68d | finish no earlier than 2012-04-12 | 陈栎; 吴波; 沈航; 杨敏 | 64h |
| 63 | 1.4.1.2 | **平台侧** |  | 33d | 2012-04-12 | 2012-05-25 |  | 36d |  |  | 4872h |
| 64 | 1.4.1.2.1 | **移动商旅产品** |  | 33d | 2012-04-12 | 2012-05-25 |  | 36d |  |  | 3992h |
| 65 | 1.4.1.2.1.1 | 编写客户端-服务器接口文档 |  | 11d | 2012-04-12 | 2012-04-26 | 19 | 58d | start no earlier than 2012-04-12 | 沈航 | 88h |
| 66 | 1.4.1.2.1.2 | **平台接口开发** |  | 20d | 2012-04-20 | 2012-05-16 |  | 43d |  |  | 3704h |
| 67 | 1.4.1.2.1.2.1 | **用户及登录模块** |  | 6d | 2012-04-23 | 2012-04-30 |  | 55.88d |  |  | 432h |
| 68 | 1.4.1.2.1.2.1.1 | 登录 |  | 6d | 2012-04-23 | 2012-04-30 |  | 55.88d | start no earlier than 2012-04-23 | 王立伟 | 48h |
| 69 | 1.4.1.2.1.2.1.2 | 匿名登录，只能浏览数据 |  | 6d | 2012-04-23 | 2012-04-30 |  | 55.88d | start no earlier than 2012-04-23 | 王立伟 | 48h |
| 70 | 1.4.1.2.1.2.1.3 | 退出登录 |  | 6d | 2012-04-23 | 2012-04-30 |  | 55.88d | start no earlier than 2012-04-23 | 王立伟 | 48h |
| 71 | 1.4.1.2.1.2.1.4 | 修改密码 |  | 6d | 2012-04-23 | 2012-04-30 |  | 55.88d | start no earlier than 2012-04-23 | 王立伟 | 48h |
| 72 | 1.4.1.2.1.2.1.5 | 充值密码 |  | 6d | 2012-04-23 | 2012-04-30 |  | 55.88d | start no earlier than 2012-04-23 | 王立伟 | 48h |
| 73 | 1.4.1.2.1.2.1.6 | 获取个人信息 |  | 6d | 2012-04-23 | 2012-04-30 |  | 55.88d | start no earlier than 2012-04-23 | 王立伟 | 48h |
| 74 | 1.4.1.2.1.2.1.7 | 修改个人信息 |  | 6d | 2012-04-23 | 2012-04-30 |  | 55.88d | start no earlier than 2012-04-23 | 王立伟 | 48h |
| 75 | 1.4.1.2.1.2.1.8 | 获取常旅卡 |  | 6d | 2012-04-23 | 2012-04-30 |  | 55.88d | start no earlier than 2012-04-23 | 王立伟 | 48h |
| 76 | 1.4.1.2.1.2.1.9 | 获取常旅卡类型 |  | 6d | 2012-04-23 | 2012-04-30 |  | 55.88d | start no earlier than 2012-04-23 | 王立伟 | 48h |

| ID | WBS | Task | Duration | Start | Finish | Predecessors | Total slack | Free slack | Constraint | Resources | Work |
| --- | --- | --- | --- | --- | --- | --- | --- | --- | --- | --- | --- |
| 77 | 1.4.1.2.1.2.2 | **机票航班模块** | 10d | 2012-04-23 | 2012-05-04 |  | 44.88d | 1.88d |  |  | 480h |
| 78 | 1.4.1.2.1.2.2.1 | 航班查询 | 10d | 2012-04-23 | 2012-05-04 |  | 44.88d |  | start no earlier than 2012-04-23 | 李彬 | 80h |
| 79 | 1.4.1.2.1.2.2.2 | 航班动态查询 | 10d | 2012-04-23 | 2012-05-04 |  | 44.88d |  | start no earlier than 2012-04-23 | 李彬 | 80h |
| 80 | 1.4.1.2.1.2.2.3 | 机票订单列表 | 10d | 2012-04-23 | 2012-05-04 |  | 44.88d |  | start no earlier than 2012-04-23 | 李彬 | 80h |
| 81 | 1.4.1.2.1.2.2.4 | 订单详情及状态 | 10d | 2012-04-23 | 2012-05-04 |  | 44.88d |  | start no earlier than 2012-04-23 | 李彬 | 80h |
| 82 | 1.4.1.2.1.2.2.5 | 取消订单 | 10d | 2012-04-23 | 2012-05-04 |  | 44.88d |  | start no earlier than 2012-04-23 | 李彬 | 80h |
| 83 | 1.4.1.2.1.2.2.6 | 机票预订 | 10d | 2012-04-23 | 2012-05-04 |  | 44.88d |  | start no earlier than 2012-04-23 | 李彬 | 80h |
| 84 | 1.4.1.2.1.2.3 | **酒店模块** | 10d | 2012-04-23 | 2012-05-04 |  | 51.88d |  |  |  | 880h |
| 85 | 1.4.1.2.1.2.3.1 | 获取酒店收藏 | 10d | 2012-04-23 | 2012-05-04 |  | 51.88d |  | start no earlier than 2012-04-23 | 唐亮 | 80h |
| 86 | 1.4.1.2.1.2.3.2 | 删除酒店收藏 | 10d | 2012-04-23 | 2012-05-04 |  | 51.88d |  | start no earlier than 2012-04-23 | 唐亮 | 80h |
| 87 | 1.4.1.2.1.2.3.3 | 天酒店收藏 | 10d | 2012-04-23 | 2012-05-04 |  | 51.88d |  | start no earlier than 2012-04-23 | 唐亮 | 80h |
| 88 | 1.4.1.2.1.2.3.4 | 酒店信息查询 | 10d | 2012-04-23 | 2012-05-04 |  | 51.88d |  | start no earlier than 2012-04-23 | 唐亮 | 80h |
| 89 | 1.4.1.2.1.2.3.5 | 酒店订单列表查询 | 10d | 2012-04-23 | 2012-05-04 |  | 51.88d |  | start no earlier than 2012-04-23 | 唐亮 | 80h |
| 90 | 1.4.1.2.1.2.3.6 | 酒店订单详情及状态 | 10d | 2012-04-23 | 2012-05-04 |  | 51.88d |  | start no earlier than 2012-04-23 | 唐亮 | 80h |
| 91 | 1.4.1.2.1.2.3.7 | 酒店房型 | 10d | 2012-04-23 | 2012-05-04 |  | 51.88d |  | start no earlier than 2012-04-23 | 唐亮 | 80h |
| 92 | 1.4.1.2.1.2.3.8 | 酒店价格 | 10d | 2012-04-23 | 2012-05-04 |  | 51.88d |  | start no earlier than 2012-04-23 | 唐亮 | 80h |
| 93 | 1.4.1.2.1.2.3.9 | 酒店位置 | 10d | 2012-04-23 | 2012-05-04 |  | 51.88d |  | start no earlier than 2012-04-23 | 唐亮 | 80h |
| 94 | 1.4.1.2.1.2.3.10 | 酒店预订 | 10d | 2012-04-23 | 2012-05-04 |  | 51.88d |  | start no earlier than 2012-04-23 | 唐亮 | 80h |
| 95 | 1.4.1.2.1.2.3.11 | 网银支付待定 | 10d | 2012-04-23 | 2012-05-04 |  | 51.88d |  | start no earlier than 2012-04-23 | 唐亮 | 80h |
| 96 | 1.4.1.2.1.2.4 | **差旅审批** | 7d | 2012-05-08 | 2012-05-16 | 77 | 43d |  |  |  | 784h |
| 97 | 1.4.1.2.1.2.4.1 | 新增申请单 | 7d | 2012-05-08 | 2012-05-16 |  | 43d |  | start no earlier than 2012-05-08 | 李彬; 唐亮 | 112h |
| 98 | 1.4.1.2.1.2.4.2 | 查看申请单 | 7d | 2012-05-08 | 2012-05-16 |  | 43d |  | start no earlier than 2012-05-08 | 李彬; 唐亮 | 112h |
| 99 | 1.4.1.2.1.2.4.3 | 审批申请单 | 7d | 2012-05-08 | 2012-05-16 |  | 43d |  | start no earlier than 2012-05-08 | 李彬; 唐亮 | 112h |
| 100 | 1.4.1.2.1.2.4.4 | 设置代审批人 | 7d | 2012-05-08 | 2012-05-16 |  | 43d |  | start no earlier than 2012-05-08 | 李彬; 唐亮 | 112h |
| 101 | 1.4.1.2.1.2.4.5 | 撤销差旅申请单 | 7d | 2012-05-08 | 2012-05-16 |  | 43d |  | start no earlier than 2012-05-08 | 李彬; 唐亮 | 112h |
| 102 | 1.4.1.2.1.2.4.6 | 查看本企业的差旅政策 | 7d | 2012-05-08 | 2012-05-16 |  | 43d |  | start no earlier than 2012-05-08 | 李彬; 唐亮 | 112h |
| 103 | 1.4.1.2.1.2.4.7 | 获取企业白名单列表 | 7d | 2012-05-08 | 2012-05-16 |  | 43d |  | start no earlier than 2012-05-08 | 李彬; 唐亮 | 112h |

| ID | WBS | Task | Duration | Start | Finish | Predecessors | Total slack | Free slack | Constraint | Resources | Work |
| --- | --- | --- | --- | --- | --- | --- | --- | --- | --- | --- | --- |
| 104 | 1.4.1.2.1.2.5 | **系统设置** | 11d | 2012-04-20 | 2012-05-03 |  | 47d | 1d |  |  | 968h |
| 105 | 1.4.1.2.1.2.5.1 | 静态表数据 | 11d | 2012-04-20 | 2012-05-03 |  | 47d |  | start no earlier than 2012-04-20 | 王波 | 88h |
| 106 | 1.4.1.2.1.2.5.2 | 关于我们 | 10d | 2012-04-23 | 2012-05-03 |  | 47d |  | start no earlier than 2012-04-23 | 王波 | 80h |
| 107 | 1.4.1.2.1.2.5.3 | 检查版本 | 10d | 2012-04-23 | 2012-05-03 |  | 47d |  | start no earlier than 2012-04-23 | 王波 | 80h |
| 108 | 1.4.1.2.1.2.5.4 | 自动检查新版本 | 10d | 2012-04-23 | 2012-05-03 |  | 47d |  | start no earlier than 2012-04-23 | 王波 | 80h |
| 109 | 1.4.1.2.1.2.5.5 | 消息提醒设置 | 10d | 2012-04-23 | 2012-05-03 |  | 47d |  | start no earlier than 2012-04-23 | 王波 | 80h |
| 110 | 1.4.1.2.1.2.5.6 | 新消息提醒机制 | 10d | 2012-04-23 | 2012-05-03 |  | 47d |  | start no earlier than 2012-04-23 | 王波 | 80h |
| 111 | 1.4.1.2.1.2.5.7 | 是否显示酒店图片 | 10d | 2012-04-23 | 2012-05-03 |  | 47d |  | start no earlier than 2012-04-23 | 王波 | 80h |
| 112 | 1.4.1.2.1.2.5.8 | 默认出发城市 | 10d | 2012-04-23 | 2012-05-03 |  | 47d |  | start no earlier than 2012-04-23 | 王波 | 80h |
| 113 | 1.4.1.2.1.2.5.9 | 默认入住城市 | 10d | 2012-04-23 | 2012-05-03 |  | 47d |  | start no earlier than 2012-04-23 | 王波 | 80h |
| 114 | 1.4.1.2.1.2.5.10 | 短信下行 | 10d | 2012-04-23 | 2012-05-03 |  | 47d |  | start no earlier than 2012-04-23 | 王波 | 80h |
| 115 | 1.4.1.2.1.2.5.11 | 邮件下发 | 10d | 2012-04-23 | 2012-05-03 |  | 47d |  | start no earlier than 2012-04-23 | 王波 | 80h |
| 116 | 1.4.1.2.1.2.5.12 | 天气查询状况 | 10d | 2012-04-23 | 2012-05-03 |  | 47d |  | start no earlier than 2012-04-23 | 王波 | 80h |
| 117 | 1.4.1.2.1.2.6 | **反馈中心** | 5d | 2012-05-07 | 2012-05-11 | 104 | 46d |  |  |  | 160h |
| 118 | 1.4.1.2.1.2.6.1 | 反馈提交 | 5d | 2012-05-07 | 2012-05-11 |  | 46d |  | start no earlier than 2012-05-07 | 王波 | 40h |
| 119 | 1.4.1.2.1.2.6.2 | 调查问卷获取 | 5d | 2012-05-07 | 2012-05-11 |  | 46d |  | start no earlier than 2012-05-07 | 王波 | 40h |
| 120 | 1.4.1.2.1.2.6.3 | 调查问卷提交 | 5d | 2012-05-07 | 2012-05-11 |  | 46d |  | start no earlier than 2012-05-07 | 王波 | 40h |
| 121 | 1.4.1.2.1.2.6.4 | 调查问卷结果 | 5d | 2012-05-07 | 2012-05-11 |  | 46d |  | start no earlier than 2012-05-07 | 王波 | 40h |
| 122 | 1.4.1.2.1.3 | 接口测试 | 5d | 2012-05-21 | 2012-05-25 |  | 36d |  | start no earlier than 2012-05-21 | 沈航 | 40h |
| 123 | 1.4.1.2.1.4 | 缺陷修改 | 20d | 2012-04-30 | 2012-05-25 |  | 36d |  | finish no earlier than 2012-05-25 | 沈航 | 160h |
| 124 | 1.4.1.2.2 | **报表产品** | 7d | 2012-05-02 | 2012-05-10 |  | 47d |  |  |  | 880h |
| 125 | 1.4.1.2.2.1 | 用户名或企业邮箱登陆 | 1d | 2012-05-02 | 2012-05-02 |  | 53d |  | start no earlier than 2012-05-02 | 王立伟; 沈航 | 16h |
| 126 | 1.4.1.2.2.2 | 取回密码 | 1d | 2012-05-02 | 2012-05-02 |  | 53d |  | start no earlier than 2012-05-02 | 王立伟; 沈航 | 16h |
| 127 | 1.4.1.2.2.3 | 获取个人信息 | 1d | 2012-05-02 | 2012-05-02 |  | 53d |  | start no earlier than 2012-05-02 | 王立伟; 沈航 | 16h |
| 128 | 1.4.1.2.2.4 | 修改个人信息 | 1d | 2012-05-02 | 2012-05-02 |  | 53d |  | start no earlier than 2012-05-02 | 王立伟; 沈航 | 16h |
| 129 | 1.4.1.2.2.5 | 修改登陆密码 | 1d | 2012-05-02 | 2012-05-02 |  | 53d |  | start no earlier than 2012-05-02 | 王立伟; 沈航 | 16h |
| 130 | 1.4.1.2.2.6 | 修改个人设置 | 1d | 2012-05-02 | 2012-05-02 |  | 53d |  | start no earlier than 2012-05-02 | 王立伟; 沈航 | 16h |
| 131 | 1.4.1.2.2.7 | 获取企业历史差旅数据 | 7d | 2012-05-02 | 2012-05-10 |  | 47d |  | start no earlier than 2012-05-02 | 王立伟; 沈航 | 112h |
| 132 | 1.4.1.2.2.8 | 获取企业数据统计报表 | 7d | 2012-05-02 | 2012-05-10 |  | 47d |  | start no earlier than 2012-05-02 | 王立伟; 沈航 | 112h |
| 133 | 1.4.1.2.2.9 | 获取企业数据走势图表 | 7d | 2012-05-02 | 2012-05-10 |  | 47d |  | start no earlier than 2012-05-02 | 王立伟; 沈航 | 112h |
| 134 | 1.4.1.2.2.10 | 获取企业差旅政策 | 7d | 2012-05-02 | 2012-05-10 |  | 47d |  | start no earlier than 2012-05-02 | 王立伟; 沈航 | 112h |
| 135 | 1.4.1.2.2.11 | 定时巡检接口 | 7d | 2012-05-02 | 2012-05-10 |  | 47d |  | start no earlier than 2012-05-02 | 王立伟; 沈航 | 112h |
| 136 | 1.4.1.2.2.12 | 检查新版本 | 7d | 2012-05-02 | 2012-05-10 |  | 47d |  | start no earlier than 2012-05-02 | 王立伟; 沈航 | 112h |
| 137 | 1.4.1.2.2.13 | 客户端信息收集，包括版本信息和行为信息 | 7d | 2012-05-02 | 2012-05-10 |  | 47d |  | start no earlier than 2012-05-02 | 王立伟; 沈航 | 112h |

| ID | WBS | Task | Duration | Start | Finish | Predecessors | Total slack | Free slack | Constraint | Resources | Work |
| --- | --- | --- | --- | --- | --- | --- | --- | --- | --- | --- | --- |
| 138 | 1.4.1.3 | **客户端侧** | 41d | 2012-04-12 | 2012-06-06 |  | 28d |  |  |  | 768h |
| 139 | 1.4.1.3.1 | **移动商旅产品** | 33d | 2012-04-12 | 2012-05-25 |  | 36d |  |  |  | 768h |
| 140 | 1.4.1.3.1.1 | **Android客户端** | 33d | 2012-04-12 | 2012-05-25 |  | 36d |  |  |  | 768h |
| 141 | 1.4.1.3.1.1.1 | **公共** | 5d | 2012-04-12 | 2012-04-18 |  | 60d |  |  |  | 72h |
| 142 | 1.4.1.3.1.1.1.1 | 网络层 | 1d | 2012-04-12 | 2012-04-12 |  | 60d | 0d | start no earlier than 2012-04-12 | 雷斌; 吴波 | 16h |
| 143 | 1.4.1.3.1.1.1.2 | 数据解构解析 | 1d | 2012-04-13 | 2012-04-13 | 142 | 60d | 0d |  | 雷斌; 张磊 | 16h |
| 144 | 1.4.1.3.1.1.1.3 | 数据解构存储 | 1d | 2012-04-16 | 2012-04-16 | 143 | 60d | 0d |  | 雷斌; 曹桐军 | 16h |
| 145 | 1.4.1.3.1.1.1.4 | 公用工具 | 1d | 2012-04-17 | 2012-04-17 | 144 | 60d | 0d |  | 吴波; 陈成 | 16h |
| 146 | 1.4.1.3.1.1.1.5 | 整体框架搭建 | 1d | 2012-04-18 | 2012-04-18 | 145 | 60d | 0d |  | 吴波 | 8h |
| 147 | 1.4.1.3.1.1.2 | **登陆和主界面** | 5d | 2012-04-19 | 2012-04-25 | 146 | 59d |  |  |  | 128h |
| 148 | 1.4.1.3.1.1.2.1 | **UI界面的搭建** | 4d | 2012-04-19 | 2012-04-24 |  | 60d |  |  |  | 80h |
| 149 | 1.4.1.3.1.1.2.1.1 | 主界面（包括闪屏） | 1d | 2012-04-23 | 2012-04-23 |  | 61d |  | start no earlier than 2012-04-21 | 曹桐军; 吴波 | 16h |
| 150 | 1.4.1.3.1.1.2.1.2 | 用户登陆 | 1d | 2012-04-19 | 2012-04-19 |  | 60d | 0d |  | 曹桐军; 吴波 | 16h |
| 151 | 1.4.1.3.1.1.2.1.3 | 匿名用户登陆 | 1d | 2012-04-20 | 2012-04-20 | 150 | 60d | 0d |  | 曹桐军; 吴波 | 16h |
| 152 | 1.4.1.3.1.1.2.1.4 | 找回密码 | 1d | 2012-04-23 | 2012-04-23 | 151 | 60d | 0d |  | 曹桐军; 吴波 | 16h |
| 153 | 1.4.1.3.1.1.2.1.5 | 版本升级 | 1d | 2012-04-24 | 2012-04-24 | 152 | 60d |  |  | 曹桐军; 吴波 | 16h |
| 154 | 1.4.1.3.1.1.2.2 | **接口代码构建** | 3d | 2012-04-23 | 2012-04-25 |  | 59d |  |  |  | 48h |
| 155 | 1.4.1.3.1.1.2.2.1 | 登陆和匿名登陆接口 | 1d | 2012-04-23 | 2012-04-23 |  | 59d | 0d | finish no earlier than 2012-04-23 | 雷斌; 张磊 | 16h |
| 156 | 1.4.1.3.1.1.2.2.2 | 找回密码接口 | 1d | 2012-04-24 | 2012-04-24 | 155 | 59d | 0d |  | 雷斌; 张磊 | 16h |
| 157 | 1.4.1.3.1.1.2.2.3 | 检测版本接口 | 1d | 2012-04-25 | 2012-04-25 | 156 | 59d |  |  | 雷斌; 张磊 | 16h |
| 158 | 1.4.1.3.1.1.3 | **个人中心** | 10d | 2012-04-26 | 2012-05-08 |  | 49d |  |  |  | 240h |
| 159 | 1.4.1.3.1.1.3.1 | **个人中心界面构建** | 9d | 2012-04-27 | 2012-05-08 |  | 49d |  |  |  | 144h |
| 160 | 1.4.1.3.1.1.3.1.1 | 获取个人信息 | 1d | 2012-04-27 | 2012-04-27 |  | 49d | 0d | start no earlier than 2012-04-27 | 曹桐军; 吴波 | 16h |
| 161 | 1.4.1.3.1.1.3.1.2 | 修改个人信息 | 1d | 2012-04-28 | 2012-04-28 | 160 | 49d | 0d |  | 曹桐军; 吴波 | 16h |
| 162 | 1.4.1.3.1.1.3.1.3 | 修改登陆密码 | 1d | 2012-04-30 | 2012-04-30 | 161 | 49d | 0d |  | 曹桐军; 吴波 | 16h |
| 163 | 1.4.1.3.1.1.3.1.4 | 获取用户里程卡 | 1d | 2012-05-01 | 2012-05-01 | 162 | 49d | 0d |  | 曹桐军; 吴波 | 16h |
| 164 | 1.4.1.3.1.1.3.1.5 | 获取用户收藏 | 1d | 2012-05-02 | 2012-05-02 | 163 | 49d | 0d |  | 曹桐军; 吴波 | 16h |
| 165 | 1.4.1.3.1.1.3.1.6 | 修改用户收藏 | 1d | 2012-05-03 | 2012-05-03 | 164 | 49d | 0d |  | 曹桐军; 吴波 | 16h |
| 166 | 1.4.1.3.1.1.3.1.7 | 增加用户收藏 | 1d | 2012-05-04 | 2012-05-04 | 165 | 49d | 0d |  | 曹桐军; 吴波 | 16h |
| 167 | 1.4.1.3.1.1.3.1.8 | 获得个人提醒设置 | 1d | 2012-05-07 | 2012-05-07 | 166 | 49d | 0d |  | 曹桐军; 吴波 | 16h |
| 168 | 1.4.1.3.1.1.3.1.9 | 修改个人提醒设置 | 1d | 2012-05-08 | 2012-05-08 | 167 | 49d |  |  | 曹桐军; 吴波 | 16h |

| ID | WBS | Task | Duration | Start | Finish | Predecessors | Total slack | Free slack | Constraint | Resources | Work |
| --- | --- | --- | --- | --- | --- | --- | --- | --- | --- | --- | --- |
| 169 | 1.4.1.3.1.1.3.2 | **个人中心模块接口** | 6d | 2012-04-26 | 2012-05-02 |  | 53d |  |  |  | 96h |
| 170 | 1.4.1.3.1.1.3.2.1 | 显示个人信息 | 1d | 2012-04-26 | 2012-04-26 |  | 56d | 0d | start no earlier than 2012-04-26 | 雷斌; 张磊 | 16h |
| 171 | 1.4.1.3.1.1.3.2.2 | 修改个人信息 | 1d | 2012-04-27 | 2012-04-27 | 170 | 56d | 0d |  | 雷斌; 张磊 | 16h |
| 172 | 1.4.1.3.1.1.3.2.3 | 展示用户收藏界面 | 1d | 2012-04-28 | 2012-04-28 | 171 | 56d |  |  | 雷斌; 张磊 | 16h |
| 173 | 1.4.1.3.1.1.3.2.4 | 增加收藏界面 | 1d | 2012-04-30 | 2012-04-30 |  | 53d | 0d | start no earlier than 2012-04-30 | 雷斌; 张磊 | 16h |
| 174 | 1.4.1.3.1.1.3.2.5 | 修改密码界面 | 1d | 2012-05-01 | 2012-05-01 | 173 | 53d | 0d |  | 雷斌; 张磊 | 16h |
| 175 | 1.4.1.3.1.1.3.2.6 | 个人提醒设置与查询界面 | 1d | 2012-05-02 | 2012-05-02 | 174 | 53d |  |  | 雷斌; 张磊 | 16h |
| 176 | 1.4.1.3.1.1.4 | **天气信息** | 2d | 2012-05-03 | 2012-05-04 |  | 51d |  |  |  |  |
| 177 | 1.4.1.3.1.1.4.1 | **天气信息UI界面（主界面的部分）** | 1d | 2012-05-03 | 2012-05-03 |  | 52d |  |  |  |  |
| 178 | 1.4.1.3.1.1.4.1.1 | 天气信息在主界面的展示 | 1d | 2012-05-03 | 2012-05-03 |  | 52d |  | start no earlier than 2012-05-03 |  |  |
| 179 | 1.4.1.3.1.1.4.2 | **天气信息接口** | 1d | 2012-05-04 | 2012-05-04 |  | 51d |  |  |  |  |
| 180 | 1.4.1.3.1.1.4.2.1 | 获取第三方的天气信息 | 1d | 2012-05-04 | 2012-05-04 |  | 51d |  | start no earlier than 2012-05-04 |  |  |
| 181 | 1.4.1.3.1.1.5 | **机票查询** | 6d | 2012-04-23 | 2012-04-28 |  | 56d |  |  |  |  |
| 182 | 1.4.1.3.1.1.5.1 | **机票查询部分界面构建** | 3d | 2012-04-23 | 2012-04-25 |  | 56d |  |  |  |  |
| 183 | 1.4.1.3.1.1.5.1.1 | 机票信息查询界面 | 1d | 2012-04-23 | 2012-04-23 |  | 56d | 0d | start no earlier than 2012-04-23 |  |  |
| 184 | 1.4.1.3.1.1.5.1.2 | 机票详情信息界面 | 1d | 2012-04-24 | 2012-04-24 | 183 | 56d | 0d |  |  |  |
| 185 | 1.4.1.3.1.1.5.1.3 | 机票地图界面相关 | 1d | 2012-04-25 | 2012-04-25 | 184 | 56d | 0d |  |  |  |
| 186 | 1.4.1.3.1.1.5.2 | **机票查询部分接口层构建** | 3d | 2012-04-26 | 2012-04-28 | 185 | 56d |  |  |  |  |
| 187 | 1.4.1.3.1.1.5.2.1 | 机票信息查询 | 1d | 2012-04-26 | 2012-04-26 |  | 56d | 0d |  |  |  |
| 188 | 1.4.1.3.1.1.5.2.2 | 机票详细信息查询 | 1d | 2012-04-27 | 2012-04-27 | 187 | 56d | 0d |  |  |  |
| 189 | 1.4.1.3.1.1.5.2.3 | 机票地图信息接口 | 1d | 2012-04-28 | 2012-04-28 | 188 | 56d |  |  |  |  |
| 190 | 1.4.1.3.1.1.6 | **酒店查询** | 5d | 2012-04-26 | 2012-05-01 |  | 54d |  |  |  | 80h |
| 191 | 1.4.1.3.1.1.6.1 | **酒店查询模块UI的构建** | 2d | 2012-04-26 | 2012-04-27 |  | 54d |  |  |  | 32h |
| 192 | 1.4.1.3.1.1.6.1.1 | 酒店查询和结果界面 | 1d | 2012-04-26 | 2012-04-26 |  | 54d | 0d | start no earlier than 2012-04-26 | 陈成; 吴波 | 16h |
| 193 | 1.4.1.3.1.1.6.1.2 | 酒店位置界面和地图相关界面 | 1d | 2012-04-27 | 2012-04-27 | 192 | 54d | 0d |  | 陈成; 吴波 | 16h |

| ID | WBS | Task | Type | Duration | Start | Finish | Predecessors | Total slack | Free slack | Constraint | Resources | Work |
| --- | --- | --- | --- | --- | --- | --- | --- | --- | --- | --- | --- | --- |
| 194 | 1.4.1.3.1.1.6.2 | **酒店查询模块接口层构建** |  | 3d | 2012-04-28 | 2012-05-01 | 193 | 54d |  |  |  | 48h |
| 195 | 1.4.1.3.1.1.6.2.1 | 酒店查询接口 |  | 1d | 2012-04-28 | 2012-04-28 |  | 54d | 0d |  | 雷斌; 张磊 | 16h |
| 196 | 1.4.1.3.1.1.6.2.2 | 酒店详情接口 |  | 1d | 2012-04-30 | 2012-04-30 | 195 | 54d | 0d |  | 雷斌; 张磊 | 16h |
| 197 | 1.4.1.3.1.1.6.2.3 | 酒店地理位置相关 |  | 1d | 2012-05-01 | 2012-05-01 | 196 | 54d |  |  | 雷斌; 张磊 | 16h |
| 198 | 1.4.1.3.1.1.7 | **联调** |  | 1d | 2012-05-03 | 2012-05-03 |  | 52d |  |  |  | 80h |
| 199 | 1.4.1.3.1.1.7.1 | 登录和主界面接口联调 |  | 1d | 2012-05-03 | 2012-05-03 |  | 52d |  | start no earlier than 2012-05-03 | 曹桐军; 吴波 | 16h |
| 200 | 1.4.1.3.1.1.7.2 | 个人中心模块界面接口联调 |  | 1d | 2012-05-03 | 2012-05-03 |  | 52d |  | start no earlier than 2012-05-03 | 曹桐军; 吴波 | 16h |
| 201 | 1.4.1.3.1.1.7.3 | 天气信息界面接口联调（主界面的一部分） |  | 1d | 2012-05-03 | 2012-05-03 |  | 52d |  | start no earlier than 2012-05-03 | 雷斌; 吴波 | 16h |
| 202 | 1.4.1.3.1.1.7.4 | 机票查询界面接口调试 |  | 1d | 2012-05-03 | 2012-05-03 |  | 52d |  | start no earlier than 2012-05-03 | 陈成; 吴波 | 16h |
| 203 | 1.4.1.3.1.1.7.5 | 酒店查询界面接口联调 |  | 1d | 2012-05-03 | 2012-05-03 |  | 52d |  | start no earlier than 2012-05-03 | 陈成; 吴波 | 16h |
| 204 | 1.4.1.3.1.1.8 | **修改缺陷** |  | 33d | 2012-04-12 | 2012-05-25 |  | 36d |  |  |  | 168h |
| 205 | 1.4.1.3.1.1.8.1 | 修改优化迭代1-中的明显问题 |  | 26d | 2012-04-23 | 2012-05-25 |  | 36d |  | start no earlier than 2012-04-23 |  |  |
| 206 | 1.4.1.3.1.1.8.2 | 产品实现 |  | 21d | 2012-04-12 | 2012-05-09 |  | 48d |  | start no earlier than 2012-04-12 | 吴波 | 168h |
| 207 | 1.4.1.3.1.2 | 产品实现 | milestone | 0d | 2012-05-25 | 2012-05-25 |  | 37d |  | start no earlier than 2012-05-25 | 吴波 |  |
| 208 | 1.4.1.3.1.3 | **iPhone客户端** |  | 33d | 2012-04-12 | 2012-05-25 |  | 36d |  |  |  |  |
| 209 | 1.4.1.3.1.3.1 | **接口开发** |  | 19d | 2012-04-12 | 2012-05-07 |  | 50d |  |  |  |  |
| 210 | 1.4.1.3.1.3.1.1 | **公共模块** |  | 3d | 2012-04-12 | 2012-04-16 |  | 57.5d | 0d |  |  |  |
| 211 | 1.4.1.3.1.3.1.1.1 | 框架搭建 |  | 1d | 2012-04-12 | 2012-04-12 |  | 57.5d | 0d | start no earlier than 2012-04-12 |  |  |
| 212 | 1.4.1.3.1.3.1.1.2 | 网络请求模块 |  | 0.5d | 2012-04-13 | 2012-04-13 | 211 | 57.5d | 0d |  |  |  |
| 213 | 1.4.1.3.1.3.1.1.3 | 数据解析模块 |  | 0.5d | 2012-04-13 | 2012-04-13 | 212 | 57.5d | 0d |  |  |  |
| 214 | 1.4.1.3.1.3.1.1.4 | 公用工具 |  | 1d | 2012-04-16 | 2012-04-16 | 213 | 57.5d |  |  |  |  |
| 215 | 1.4.1.3.1.3.1.2 | **登录模块** |  | 3d | 2012-04-17 | 2012-04-19 |  | 57.5d |  |  |  |  |
| 216 | 1.4.1.3.1.3.1.2.1 | 用户登录 |  | 1d | 2012-04-17 | 2012-04-17 | 210 | 57.5d | 0d |  |  |  |
| 217 | 1.4.1.3.1.3.1.2.2 | 匿名用户登录 |  | 0.5d | 2012-04-18 | 2012-04-18 | 216 | 57.5d | 0d |  |  |  |
| 218 | 1.4.1.3.1.3.1.2.3 | 找回密码 |  | 0.5d | 2012-04-18 | 2012-04-18 | 217 | 57.5d | 0d |  |  |  |
| 219 | 1.4.1.3.1.3.1.2.4 | 检查新版本 |  | 1d | 2012-04-19 | 2012-04-19 | 218 | 57.5d | 0d |  |  |  |

| ID | WBS | Task | Duration | Start | Finish | Predecessors | Total slack | Free slack | Constraint |
| --- | --- | --- | --- | --- | --- | --- | --- | --- | --- |
| 220 | 1.4.1.3.1.3.1.3 | **个人中心** | 5.5d | 2012-04-20 | 2012-04-27 |  | 57.5d |  |  |
| 221 | 1.4.1.3.1.3.1.3.1 | 获取个人信息 | 1d | 2012-04-20 | 2012-04-20 | 219 | 57.5d | 0d |  |
| 222 | 1.4.1.3.1.3.1.3.2 | 修改个人信息 | 0.5d | 2012-04-23 | 2012-04-23 | 221 | 57.5d | 0d |  |
| 223 | 1.4.1.3.1.3.1.3.3 | 修改登录密码 | 0.5d | 2012-04-23 | 2012-04-23 | 222 | 57.5d | 0d |  |
| 224 | 1.4.1.3.1.3.1.3.4 | 修改个人提醒设置 | 0.5d | 2012-04-24 | 2012-04-24 | 223 | 57.5d | 0d |  |
| 225 | 1.4.1.3.1.3.1.3.5 | 获取个人提醒设置 | 0.5d | 2012-04-24 | 2012-04-24 | 224 | 57.5d | 0d |  |
| 226 | 1.4.1.3.1.3.1.3.6 | 获取用户里程卡 | 0.5d | 2012-04-25 | 2012-04-25 | 225 | 57.5d | 0d |  |
| 227 | 1.4.1.3.1.3.1.3.7 | 获取用户收藏 | 1d | 2012-04-25 | 2012-04-26 | 226 | 57.5d | 0d |  |
| 228 | 1.4.1.3.1.3.1.3.8 | 修改用户收藏 | 0.5d | 2012-04-26 | 2012-04-26 | 227 | 57.5d | 0d |  |
| 229 | 1.4.1.3.1.3.1.3.9 | 增加用户收藏 | 0.5d | 2012-04-27 | 2012-04-27 | 228 | 57.5d |  |  |
| 230 | 1.4.1.3.1.3.1.4 | **酒店机票查询接口** | 7d | 2012-04-27 | 2012-05-04 |  | 45d | 0d |  |
| 231 | 1.4.1.3.1.3.1.4.1 | 酒店查询 | 3d | 2012-04-27 | 2012-04-30 |  | 45d | 0d | start no earlier than 2012-04-27 |
| 232 | 1.4.1.3.1.3.1.4.2 | 酒店详情查询 | 0.5d | 2012-05-01 | 2012-05-01 | 231 | 45d | 0d |  |
| 233 | 1.4.1.3.1.3.1.4.3 | 获取酒店位置图 | 1d | 2012-05-01 | 2012-05-02 | 232 | 45d | 0d |  |
| 234 | 1.4.1.3.1.3.1.4.4 | 机票查询 | 1d | 2012-05-02 | 2012-05-03 | 233 | 45d | 0d |  |
| 235 | 1.4.1.3.1.3.1.4.5 | 机票详情查询 | 0.5d | 2012-05-03 | 2012-05-03 | 234 | 45d | 0d |  |
| 236 | 1.4.1.3.1.3.1.4.6 | 地图服务接口 | 1d | 2012-05-04 | 2012-05-04 | 235 | 45d | 0d |  |
| 237 | 1.4.1.3.1.3.1.5 | **天气预报** | 1d | 2012-05-07 | 2012-05-07 |  | 50d |  |  |
| 238 | 1.4.1.3.1.3.1.5.1 | 获取天气预报信息 | 1d | 2012-05-07 | 2012-05-07 | 236 | 50d |  |  |
| 239 | 1.4.1.3.1.3.2 | **界面开发** | 15.5d | 2012-04-17 | 2012-05-07 |  | 47.5d | 0d |  |
| 240 | 1.4.1.3.1.3.2.1 | **登录模块** | 4d | 2012-04-17 | 2012-04-20 |  | 48.5d |  |  |
| 241 | 1.4.1.3.1.3.2.1.1 | 登录界面 | 1d | 2012-04-17 | 2012-04-17 |  | 48.5d | 0d | start no earlier than 2012-04-17 |
| 242 | 1.4.1.3.1.3.2.1.2 | 登录中界面 | 1d | 2012-04-18 | 2012-04-18 | 241 | 48.5d | 0d |  |
| 243 | 1.4.1.3.1.3.2.1.3 | 找回密码界面 | 0.5d | 2012-04-19 | 2012-04-19 | 242 | 48.5d | 0d |  |
| 244 | 1.4.1.3.1.3.2.1.4 | 启动界面 | 0.5d | 2012-04-19 | 2012-04-19 | 243 | 48.5d | 0d |  |
| 245 | 1.4.1.3.1.3.2.1.5 | 版本升级界面 | 1d | 2012-04-20 | 2012-04-20 | 244 | 48.5d | 0d |  |

| ID | WBS | Task | Type | Duration | Start | Finish | Predecessors | Total slack | Free slack | Constraint | Resources |
| --- | --- | --- | --- | --- | --- | --- | --- | --- | --- | --- | --- |
| 246 | 1.4.1.3.1.3.2.2 | **主页界面** |  | 4d | 2012-04-23 | 2012-04-26 |  | 48.5d |  |  |  |
| 247 | 1.4.1.3.1.3.2.2.1 | 首页界面 |  | 4d | 2012-04-23 | 2012-04-26 | 245 | 48.5d | 0d |  |  |
| 248 | 1.4.1.3.1.3.2.3 | **个人中心模块** |  | 7.5d | 2012-04-27 | 2012-05-07 | 247 | 47.5d |  |  |  |
| 249 | 1.4.1.3.1.3.2.3.1 | 个人信息展现 |  | 1d | 2012-04-27 | 2012-04-27 |  | 48.5d | 1d |  |  |
| 250 | 1.4.1.3.1.3.2.3.2 | 个人信息修改 |  | 0.5d | 2012-04-30 | 2012-04-30 | 249 | 47.5d | 0d | start no earlier than 2012-04-30 |  |
| 251 | 1.4.1.3.1.3.2.3.3 | 用户收藏界面展现 |  | 1d | 2012-04-30 | 2012-05-01 | 250 | 47.5d | 0d |  |  |
| 252 | 1.4.1.3.1.3.2.3.4 | 增加收藏界面展现 |  | 1d | 2012-05-01 | 2012-05-02 | 251 | 47.5d | 0d |  |  |
| 253 | 1.4.1.3.1.3.2.3.5 | 修改密码界面 |  | 1d | 2012-05-02 | 2012-05-03 | 252 | 47.5d | 0d |  |  |
| 254 | 1.4.1.3.1.3.2.3.6 | 个人提醒设置与查询界面 |  | 2d | 2012-05-03 | 2012-05-07 | 253 | 47.5d |  |  |  |
| 255 | 1.4.1.3.1.3.2.4 | **酒店机票查询界面** |  | 13d | 2012-04-17 | 2012-05-02 |  | 48d |  |  |  |
| 256 | 1.4.1.3.1.3.2.4.1 | 酒店查询界面 |  | 1d | 2012-04-17 | 2012-04-17 |  | 49d | 0d | start no earlier than 2012-04-17 |  |
| 257 | 1.4.1.3.1.3.2.4.2 | 酒店查询结果展现 |  | 2d | 2012-04-18 | 2012-04-19 | 256 | 49d | 0d |  |  |
| 258 | 1.4.1.3.1.3.2.4.3 | 酒店位置展现 |  | 3d | 2012-04-20 | 2012-04-24 | 257 | 49d | 0d |  |  |
| 259 | 1.4.1.3.1.3.2.4.4 | 酒店地图服务展现 |  | 3d | 2012-04-25 | 2012-04-27 | 258 | 49d | 1d |  |  |
| 260 | 1.4.1.3.1.3.2.4.5 | 机票查询界面 |  | 1d | 2012-04-30 | 2012-04-30 | 259 | 48d | 0d | start no earlier than 2012-04-30 |  |
| 261 | 1.4.1.3.1.3.2.4.6 | 机票查询结果展现 |  | 2d | 2012-05-01 | 2012-05-02 | 260 | 48d | 0d |  |  |
| 262 | 1.4.1.3.1.3.2.5 | **天气预报模块** |  | 2d | 2012-05-03 | 2012-05-04 |  | 48d |  |  |  |
| 263 | 1.4.1.3.1.3.2.5.1 | 天气预报界面 |  | 2d | 2012-05-03 | 2012-05-04 | 261 | 48d |  |  |  |
| 264 | 1.4.1.3.1.3.3 | **界面接口联调** |  | 6d | 2012-05-07 | 2012-05-14 |  | 45d |  |  |  |
| 265 | 1.4.1.3.1.3.3.1 | 登录模块联调 |  | 1d | 2012-05-07 | 2012-05-08 | 239 | 47.5d | 0.5d | start no earlier than 2012-05-07 |  |
| 266 | 1.4.1.3.1.3.3.2 | 个人中心联调 |  | 2d | 2012-05-09 | 2012-05-10 | 265 | 47d |  | finish no earlier than 2012-05-10 |  |
| 267 | 1.4.1.3.1.3.3.3 | 酒店机票查询模块联调 |  | 6d | 2012-05-07 | 2012-05-14 | 230 | 45d |  | finish no earlier than 2012-05-11 |  |
| 268 | 1.4.1.3.1.3.3.4 | 天气预报模块联调 |  | 2d | 2012-05-10 | 2012-05-11 |  | 46d |  | finish no earlier than 2012-05-11 |  |
| 269 | 1.4.1.3.1.3.4 | **缺陷修改** |  | 11d | 2012-05-11 | 2012-05-25 |  | 36d |  |  |  |
| 270 | 1.4.1.3.1.3.4.1 | 迭代一bug进行修改 |  | 11d | 2012-05-11 | 2012-05-25 |  | 36d |  | finish no earlier than 2012-05-25 |  |
| 271 | 1.4.1.3.1.4 | 产品实现 | milestone | 0d | 2012-05-25 | 2012-05-25 |  | 37d |  | start no earlier than 2012-05-25 | 陈栎 |

| ID | WBS | Task | Duration | Start | Finish | Predecessors | Total slack | Free slack | Constraint |
| --- | --- | --- | --- | --- | --- | --- | --- | --- | --- |
| 272 | 1.4.1.3.2 | **报表pad产品** | 41d | 2012-04-12 | 2012-06-06 |  | 28d |  |  |
| 273 | 1.4.1.3.2.1 | **Android客户端** | 22d | 2012-04-12 | 2012-05-10 |  | 47d |  |  |
| 274 | 1.4.1.3.2.1.1 | **实现** | 20d | 2012-04-12 | 2012-05-08 |  | 49d |  |  |
| 275 | 1.4.1.3.2.1.1.1 | **公共模块** | 2.5d | 2012-04-12 | 2012-04-16 |  | 66.5d |  |  |
| 276 | 1.4.1.3.2.1.1.1.1 | 框架搭建 | 0.5d | 2012-04-12 | 2012-04-12 |  | 66.5d | 0d | start no earlier than 2012-04-12 |
| 277 | 1.4.1.3.2.1.1.1.2 | 网络请求模块 | 0.5d | 2012-04-12 | 2012-04-12 | 276 | 66.5d | 0d |  |
| 278 | 1.4.1.3.2.1.1.1.3 | 数据解析模块 | 0.5d | 2012-04-13 | 2012-04-13 | 277 | 66.5d | 0d |  |
| 279 | 1.4.1.3.2.1.1.1.4 | 公用工具 | 1d | 2012-04-13 | 2012-04-16 | 278 | 66.5d |  |  |
| 280 | 1.4.1.3.2.1.1.2 | **登录** | 3d | 2012-04-18 | 2012-04-20 |  | 62d |  |  |
| 281 | 1.4.1.3.2.1.1.2.1 | **登录UI部分** | 3d | 2012-04-18 | 2012-04-20 |  | 62d |  |  |
| 282 | 1.4.1.3.2.1.1.2.1.1 | 登录界面 | 1d | 2012-04-18 | 2012-04-18 |  | 62d | 0d | start no earlier than 2012-04-18 |
| 283 | 1.4.1.3.2.1.1.2.1.2 | 启动画面 | 0.5d | 2012-04-19 | 2012-04-19 | 282 | 62d | 0d |  |
| 284 | 1.4.1.3.2.1.1.2.1.3 | 闪屏界面 | 0.5d | 2012-04-19 | 2012-04-19 | 283 | 62d | 0d | start no earlier than 2012-04-19 |
| 285 | 1.4.1.3.2.1.1.2.1.4 | 找回密码界面 | 0.5d | 2012-04-20 | 2012-04-20 | 284 | 62d | 0d | start no earlier than 2012-04-20 |
| 286 | 1.4.1.3.2.1.1.2.1.5 | 版本升级界面 | 0.5d | 2012-04-20 | 2012-04-20 | 285 | 62d |  |  |
| 287 | 1.4.1.3.2.1.1.2.2 | **登录接口部分** | 3d | 2012-04-18 | 2012-04-20 |  | 62d |  |  |
| 288 | 1.4.1.3.2.1.1.2.2.1 | 登录接口 | 1d | 2012-04-18 | 2012-04-18 |  | 62d | 0d | start no earlier than 2012-04-18 |
| 289 | 1.4.1.3.2.1.1.2.2.2 | 取回密码接口 | 1d | 2012-04-19 | 2012-04-19 | 288 | 62d | 0d |  |
| 290 | 1.4.1.3.2.1.1.2.2.3 | 版本升级接口 | 1d | 2012-04-20 | 2012-04-20 | 289 | 62d |  |  |
| 291 | 1.4.1.3.2.1.1.3 | **个人设置及消息提醒** | 13d | 2012-04-23 | 2012-05-08 |  | 49d |  |  |
| 292 | 1.4.1.3.2.1.1.3.1 | **个人设置UI部分** | 6d | 2012-04-23 | 2012-04-28 |  | 56d |  |  |
| 293 | 1.4.1.3.2.1.1.3.1.1 | 个人信息界面 | 1d | 2012-04-23 | 2012-04-23 |  | 56d | 0d | start no earlier than 2012-04-23 |
| 294 | 1.4.1.3.2.1.1.3.1.2 | 修改个人信息界面 | 1d | 2012-04-24 | 2012-04-24 | 293 | 56d | 0d |  |
| 295 | 1.4.1.3.2.1.1.3.1.3 | 意见反馈界面 | 1d | 2012-04-25 | 2012-04-25 | 294 | 56d | 0d |  |
| 296 | 1.4.1.3.2.1.1.3.1.4 | 调查文件界面 | 1d | 2012-04-26 | 2012-04-26 | 295 | 56d | 0d |  |
| 297 | 1.4.1.3.2.1.1.3.1.5 | 消息提醒界面 | 2d | 2012-04-27 | 2012-04-28 | 296 | 56d |  |  |

| ID | WBS | Task | Type | Duration | Start | Finish | Predecessors | Total slack | Free slack | Constraint | Resources |
| --- | --- | --- | --- | --- | --- | --- | --- | --- | --- | --- | --- |
| 298 | 1.4.1.3.2.1.1.3.2 | **个人设置接口部分** |  | 5d | 2012-05-02 | 2012-05-08 |  | 49d |  |  |  |
| 299 | 1.4.1.3.2.1.1.3.2.1 | 获取个人信息 |  | 1d | 2012-05-02 | 2012-05-02 |  | 49d | 0d | start no earlier than 2012-05-02 |  |
| 300 | 1.4.1.3.2.1.1.3.2.2 | 修改个人信息接口 |  | 1d | 2012-05-03 | 2012-05-03 | 299 | 49d | 0d |  |  |
| 301 | 1.4.1.3.2.1.1.3.2.3 | 意见反馈 |  | 1d | 2012-05-04 | 2012-05-04 | 300 | 49d | 0d |  |  |
| 302 | 1.4.1.3.2.1.1.3.2.4 | 调查问卷 |  | 1d | 2012-05-07 | 2012-05-07 | 301 | 49d | 0d |  |  |
| 303 | 1.4.1.3.2.1.1.3.2.5 | 系统提醒相关接口 |  | 1d | 2012-05-08 | 2012-05-08 | 302 | 49d |  |  |  |
| 304 | 1.4.1.3.2.1.2 | **联调** |  | 3d | 2012-05-08 | 2012-05-10 |  | 47d |  |  |  |
| 305 | 1.4.1.3.2.1.2.1 | 登录模块 |  | 1d | 2012-05-08 | 2012-05-08 |  | 47d | 0d | start no earlier than 2012-05-08 |  |
| 306 | 1.4.1.3.2.1.2.2 | 个人设置模块 |  | 1d | 2012-05-09 | 2012-05-09 | 305 | 47d | 0d |  |  |
| 307 | 1.4.1.3.2.1.2.3 | 消息中心模块 |  | 1d | 2012-05-10 | 2012-05-10 | 306 | 47d |  |  |  |
| 308 | 1.4.1.3.2.1.3 | **缺陷修改** |  | 15d | 2012-04-23 | 2012-05-10 |  | 47d |  |  |  |
| 309 | 1.4.1.3.2.1.3.1 | bug进行修改 |  | 15d | 2012-04-23 | 2012-05-10 |  | 47d |  | start no earlier than 2012-04-23 |  |
| 310 | 1.4.1.3.2.2 | 产品实现 | milestone | 0d | 2012-05-10 | 2012-05-10 |  | 47d |  | finish no earlier than 2012-05-10 | 吴波 |
| 311 | 1.4.1.3.2.3 | **iPhone客户端** |  | 41d | 2012-04-12 | 2012-06-06 |  | 28d |  |  |  |
| 312 | 1.4.1.3.2.3.1 | **接口开发** |  | 18d | 2012-04-12 | 2012-05-04 |  | 29d |  |  |  |
| 313 | 1.4.1.3.2.3.1.1 | **公共模块** |  | 3d | 2012-04-12 | 2012-04-16 |  | 29d | 0d |  |  |
| 314 | 1.4.1.3.2.3.1.1.1 | 框架搭建 |  | 1d | 2012-04-12 | 2012-04-12 |  | 29d | 0d | start no earlier than 2012-04-12 |  |
| 315 | 1.4.1.3.2.3.1.1.2 | 网络请求模块 |  | 0.5d | 2012-04-13 | 2012-04-13 | 314 | 29d | 0d |  |  |
| 316 | 1.4.1.3.2.3.1.1.3 | 数据解析模块 |  | 0.5d | 2012-04-13 | 2012-04-13 | 315 | 29d | 0d |  |  |
| 317 | 1.4.1.3.2.3.1.1.4 | 公用工具 |  | 1d | 2012-04-16 | 2012-04-16 | 316 | 29d |  |  |  |
| 318 | 1.4.1.3.2.3.1.2 | **登录模块接口** |  | 2d | 2012-04-17 | 2012-04-18 | 313 | 52d |  |  |  |
| 319 | 1.4.1.3.2.3.1.2.1 | 登录接口 |  | 1d | 2012-04-17 | 2012-04-17 |  | 52d | 0d |  |  |
| 320 | 1.4.1.3.2.3.1.2.2 | 取回密码接口 |  | 0.5d | 2012-04-18 | 2012-04-18 | 319 | 52d | 0d |  |  |
| 321 | 1.4.1.3.2.3.1.2.3 | 检测新版本 |  | 0.5d | 2012-04-18 | 2012-04-18 | 320 | 52d | 0d |  |  |

| ID | WBS | Task | Duration | Start | Finish | Predecessors | Total slack | Free slack | Constraint |
| --- | --- | --- | --- | --- | --- | --- | --- | --- | --- |
| 322 | 1.4.1.3.2.3.1.3 | **报表模块接口** | 5d | 2012-04-19 | 2012-04-25 |  | 52d |  |  |
| 323 | 1.4.1.3.2.3.1.3.1 | 获取企业历史差旅数据 | 2d | 2012-04-19 | 2012-04-20 | 321 | 52d | 0d |  |
| 324 | 1.4.1.3.2.3.1.3.2 | 获取企业数据统计报表 | 1d | 2012-04-23 | 2012-04-23 | 323 | 52d | 0d |  |
| 325 | 1.4.1.3.2.3.1.3.3 | 获取企业数据走势图 | 1d | 2012-04-24 | 2012-04-24 | 324 | 52d | 0d |  |
| 326 | 1.4.1.3.2.3.1.3.4 | 获取企业差旅政策 | 1d | 2012-04-25 | 2012-04-25 | 325 | 52d | 0d |  |
| 327 | 1.4.1.3.2.3.1.4 | **个人设置模块接口** | 6d | 2012-04-26 | 2012-05-02 |  | 51d |  |  |
| 328 | 1.4.1.3.2.3.1.4.1 | 获取个人信息接口 | 1d | 2012-04-26 | 2012-04-26 | 326 | 52d | 0d |  |
| 329 | 1.4.1.3.2.3.1.4.2 | 修改个人信息接口 | 0.5d | 2012-04-27 | 2012-04-27 | 328 | 52d | 0d |  |
| 330 | 1.4.1.3.2.3.1.4.3 | 获取个人设置接口 | 1d | 2012-04-27 | 2012-04-28 | 329 | 52d | 0d |  |
| 331 | 1.4.1.3.2.3.1.4.4 | 修改个人设置接口 | 0.5d | 2012-04-28 | 2012-04-28 | 330 | 52d | 0d |  |
| 332 | 1.4.1.3.2.3.1.4.5 | 意见反馈 | 1d | 2012-04-30 | 2012-04-30 | 331 | 52d | 1d |  |
| 333 | 1.4.1.3.2.3.1.4.6 | 调查问卷 | 1d | 2012-05-02 | 2012-05-02 | 332 | 51d | 0d | finish no earlier than 2012-05-02 |
| 334 | 1.4.1.3.2.3.1.5 | **消息中心** | 2d | 2012-05-03 | 2012-05-04 |  | 51d |  |  |
| 335 | 1.4.1.3.2.3.1.5.1 | 定时巡检 | 1d | 2012-05-03 | 2012-05-03 | 333 | 51d | 0d |  |
| 336 | 1.4.1.3.2.3.1.5.2 | 获取系统消息 | 1d | 2012-05-04 | 2012-05-04 | 335 | 51d |  |  |
| 337 | 1.4.1.3.2.3.2 | **界面开发** | 26d | 2012-04-17 | 2012-05-21 |  | 28d | 0d |  |
| 338 | 1.4.1.3.2.3.2.1 | **登录模块界面** | 4d | 2012-04-17 | 2012-04-20 | 313 | 29d |  |  |
| 339 | 1.4.1.3.2.3.2.1.1 | 登录界面 | 1d | 2012-04-17 | 2012-04-17 |  | 29d | 0d |  |
| 340 | 1.4.1.3.2.3.2.1.2 | 启动画面 | 0.5d | 2012-04-18 | 2012-04-18 | 339 | 29d | 0d |  |
| 341 | 1.4.1.3.2.3.2.1.3 | 登录中界面 | 0.5d | 2012-04-18 | 2012-04-18 | 340 | 29d | 0d |  |
| 342 | 1.4.1.3.2.3.2.1.4 | 取回密码界面 | 1d | 2012-04-19 | 2012-04-19 | 341 | 29d | 0d |  |
| 343 | 1.4.1.3.2.3.2.1.5 | 新版本提示界面 | 1d | 2012-04-20 | 2012-04-20 | 342 | 29d | 0d |  |
| 344 | 1.4.1.3.2.3.2.2 | **个人设置模块** | 5d | 2012-04-23 | 2012-04-27 |  | 29d | 1d |  |
| 345 | 1.4.1.3.2.3.2.2.1 | 个人信息界面 | 1d | 2012-04-23 | 2012-04-23 | 343 | 29d | 0d |  |
| 346 | 1.4.1.3.2.3.2.2.2 | 修改个人信息界面 | 0.5d | 2012-04-24 | 2012-04-24 | 345 | 29d | 0d |  |
| 347 | 1.4.1.3.2.3.2.2.3 | 个人设置界面 | 1d | 2012-04-24 | 2012-04-25 | 346 | 29d | 0d |  |
| 348 | 1.4.1.3.2.3.2.2.4 | 修改个人设置界面 | 0.5d | 2012-04-25 | 2012-04-25 | 347 | 29d | 0d |  |
| 349 | 1.4.1.3.2.3.2.2.5 | 意见反馈界面 | 1d | 2012-04-26 | 2012-04-26 | 348 | 29d | 0d |  |
| 350 | 1.4.1.3.2.3.2.2.6 | 调查文件界面 | 1d | 2012-04-27 | 2012-04-27 | 349 | 29d |  |  |

| ID | WBS | Task | Type | Duration | Start | Finish | Predecessors | Total slack | Free slack | Constraint | Resources | Work |
| --- | --- | --- | --- | --- | --- | --- | --- | --- | --- | --- | --- | --- |
| 351 | 1.4.1.3.2.3.2.3 | **报表模块界面** |  | 12d | 2012-04-30 | 2012-05-15 | 344 | 28d | 0d |  |  |  |
| 352 | 1.4.1.3.2.3.2.3.1 | 企业历史差旅数据展现 |  | 3d | 2012-04-30 | 2012-05-02 |  | 28d | 0d | start no earlier than 2012-04-30 |  |  |
| 353 | 1.4.1.3.2.3.2.3.2 | 企业数据统计报表展现 |  | 3d | 2012-05-03 | 2012-05-07 | 352 | 28d | 0d |  |  |  |
| 354 | 1.4.1.3.2.3.2.3.3 | 企业数据走势图展现 |  | 3d | 2012-05-08 | 2012-05-10 | 353 | 28d | 0d |  |  |  |
| 355 | 1.4.1.3.2.3.2.3.4 | 企业差旅政策展现 |  | 3d | 2012-05-11 | 2012-05-15 | 354 | 28d |  |  |  |  |
| 356 | 1.4.1.3.2.3.2.4 | **消息中心模块** |  | 4d | 2012-05-16 | 2012-05-21 | 351 | 28d |  |  |  |  |
| 357 | 1.4.1.3.2.3.2.4.1 | 消息提醒界面 |  | 3d | 2012-05-16 | 2012-05-18 |  | 28d | 0d |  |  |  |
| 358 | 1.4.1.3.2.3.2.4.2 | 消息详情界面展现 |  | 1d | 2012-05-21 | 2012-05-21 | 357 | 28d |  |  |  |  |
| 359 | 1.4.1.3.2.3.3 | **界面接口联调** |  | 12d | 2012-05-22 | 2012-06-06 | 337 | 28d |  |  |  |  |
| 360 | 1.4.1.3.2.3.3.1 | 登录模块 |  | 2d | 2012-05-22 | 2012-05-23 |  | 28d | 0d |  |  |  |
| 361 | 1.4.1.3.2.3.3.2 | 个人设置模块 |  | 3d | 2012-05-24 | 2012-05-28 | 360 | 28d | 0d |  |  |  |
| 362 | 1.4.1.3.2.3.3.3 | 报表模块 |  | 5d | 2012-05-29 | 2012-06-04 | 361 | 28d | 0d |  |  |  |
| 363 | 1.4.1.3.2.3.3.4 | 消息中心模块 |  | 2d | 2012-06-05 | 2012-06-06 | 362 | 28d |  |  |  |  |
| 364 | 1.4.1.3.2.4 | 产品实现 | milestone | 0d | 2012-06-06 | 2012-06-06 |  | 29d |  | start no earlier than 2012-06-06 | 陈栎 |  |
| 365 | 1.4.2 | **迭代2** |  | 38d? | 2012-05-07 | 2012-06-27 |  | 13d |  |  |  | 1440h |
| 366 | 1.4.2.1 | **平台侧** |  | 15d? | 2012-05-28 | 2012-06-15 |  | 21d |  |  |  | 192h |
| 367 | 1.4.2.1.1 | **后台系统** |  | 15d? | 2012-05-28 | 2012-06-15 |  | 21d |  |  |  | 192h |
| 368 | 1.4.2.1.1.1 | 需求调研 |  | 1d? | 2012-05-28 | 2012-05-28 |  | 35d |  | start no earlier than 2012-05-28 |  |  |
| 369 | 1.4.2.1.1.2 | **产品分享** |  | 1d | 2012-05-29 | 2012-05-29 |  | 34d |  |  |  |  |
| 370 | 1.4.2.1.1.2.1 | 通过短信的形式将客户端产品推荐给他人 |  | 1d | 2012-05-29 | 2012-05-29 |  | 34d |  | finish no earlier than 2012-05-29 |  |  |
| 371 | 1.4.2.1.1.2.2 | 邮件或push等方式将机票、酒店产品信息推荐给他人 |  | 1d | 2012-05-29 | 2012-05-29 |  | 34d |  | finish no earlier than 2012-05-29 |  |  |
| 372 | 1.4.2.1.1.3 | **订阅管理** |  | 1d | 2012-05-30 | 2012-05-30 |  | 33d |  |  |  |  |
| 373 | 1.4.2.1.1.3.1 | 可通过短信、push、邮件等方式订阅低价机票及酒店信息 |  | 1d | 2012-05-30 | 2012-05-30 |  | 33d |  | finish no earlier than 2012-05-30 |  |  |
| 374 | 1.4.2.1.1.3.2 | 可通过短信、push、邮件等方式订阅航班实时起降信息 |  | 1d | 2012-05-30 | 2012-05-30 |  | 33d |  | finish no earlier than 2012-05-30 |  |  |
| 375 | 1.4.2.1.1.3.3 | 可查看其订阅的信息 |  | 1d | 2012-05-30 | 2012-05-30 |  | 33d |  | finish no earlier than 2012-05-30 |  |  |

| ID | WBS | Task | Duration | Start | Finish | Predecessors | Total slack | Free slack | Constraint | Resources | Work |
| --- | --- | --- | --- | --- | --- | --- | --- | --- | --- | --- | --- |
| 376 | 1.4.2.1.1.4 | **监测更新（版本维护）** | 1d | 2012-05-31 | 2012-05-31 |  | 32d |  |  |  |  |
| 377 | 1.4.2.1.1.4.1 | 发布 | 1d | 2012-05-31 | 2012-05-31 |  | 32d |  | finish no earlier than 2012-05-31 |  |  |
| 378 | 1.4.2.1.1.4.2 | 列表 | 1d | 2012-05-31 | 2012-05-31 |  | 32d |  | finish no earlier than 2012-05-31 |  |  |
| 379 | 1.4.2.1.1.5 | **数据收集** | 3d | 2012-06-04 | 2012-06-06 |  | 28d |  |  |  |  |
| 380 | 1.4.2.1.1.5.1 | log日志设计 | 3d | 2012-06-04 | 2012-06-06 |  | 28d |  | finish no earlier than 2012-06-06 |  |  |
| 381 | 1.4.2.1.1.5.2 | 手机终端信息收集 | 3d | 2012-06-04 | 2012-06-06 |  | 28d |  | finish no earlier than 2012-06-06 |  |  |
| 382 | 1.4.2.1.1.6 | **用户中心** | 2d | 2012-06-07 | 2012-06-08 |  | 26d |  |  |  |  |
| 383 | 1.4.2.1.1.6.1 | 用户扩展信息查看与维护 | 2d | 2012-06-07 | 2012-06-08 |  | 26d |  | finish no earlier than 2012-06-08 |  |  |
| 384 | 1.4.2.1.1.6.2 | 个人信息管理 | 2d | 2012-06-07 | 2012-06-08 |  | 26d |  | finish no earlier than 2012-06-08 |  |  |
| 385 | 1.4.2.1.1.7 | **应用维护管理** | 4d | 2012-06-11 | 2012-06-14 |  | 22d |  |  |  |  |
| 386 | 1.4.2.1.1.7.1 | Push消息设计与实现 | 4d | 2012-06-11 | 2012-06-14 |  | 22d |  | finish no earlier than 2012-06-14 |  |  |
| 387 | 1.4.2.1.1.7.2 | 临时待处理订单管理设计与实现 | 4d | 2012-06-11 | 2012-06-14 |  | 22d |  | finish no earlier than 2012-06-14 |  |  |
| 388 | 1.4.2.1.1.8 | 管理后台系统开发 | 14d | 2012-05-28 | 2012-06-14 |  | 22d |  | finish no earlier than 2012-06-14 | 沈航 | 112h |
| 389 | 1.4.2.1.1.9 | 管理后台系统缺陷修改 | 10d | 2012-06-04 | 2012-06-15 |  | 21d |  | finish no earlier than 2012-06-15 | 沈航 | 80h |
| 390 | 1.4.2.2 | **客户端侧** | 38d? | 2012-05-07 | 2012-06-27 |  | 13d |  |  |  | 1248h |
| 391 | 1.4.2.2.1 | **移动商旅产品** | 34d | 2012-05-07 | 2012-06-21 |  | 17d |  |  |  | 592h |
| 392 | 1.4.2.2.1.1 | **Android客户端** | 30d | 2012-05-07 | 2012-06-15 |  | 21d |  |  |  | 592h |
| 393 | 1.4.2.2.1.1.1 | **实现** | 18d | 2012-05-07 | 2012-05-30 |  | 33d |  |  |  | 592h |
| 394 | 1.4.2.2.1.1.1.1 | **机票预订** | 3d | 2012-05-07 | 2012-05-09 |  | 48d |  |  |  | 96h |
| 395 | 1.4.2.2.1.1.1.1.1 | **机票预订UI部分** | 3d | 2012-05-07 | 2012-05-09 |  | 48d |  |  | 陈成; 吴波 | 48h |
| 396 | 1.4.2.2.1.1.1.1.1.1 | 机票订单界面（与酒店订单可能一样） | 1d | 2012-05-07 | 2012-05-07 |  | 48d | 0d | start no earlier than 2012-05-07 |  |  |
| 397 | 1.4.2.2.1.1.1.1.1.2 | 机票订单详情界面 | 1d | 2012-05-08 | 2012-05-08 | 396 | 48d | 0d |  |  |  |
| 398 | 1.4.2.2.1.1.1.1.1.3 | 机票预订界面和第三方界面 | 1d | 2012-05-09 | 2012-05-09 | 397 | 48d |  |  |  |  |
| 399 | 1.4.2.2.1.1.1.1.2 | **机票预订接口部分** | 3d | 2012-05-07 | 2012-05-09 |  | 48d |  |  | 雷斌; 张磊 | 48h |
| 400 | 1.4.2.2.1.1.1.1.2.1 | 机票订单信息 | 1d | 2012-05-07 | 2012-05-07 |  | 48d | 0d | start no earlier than 2012-05-07 |  |  |
| 401 | 1.4.2.2.1.1.1.1.2.2 | 机票预订 | 1d | 2012-05-08 | 2012-05-08 | 400 | 48d | 0d |  |  |  |
| 402 | 1.4.2.2.1.1.1.1.2.3 | 取消预订 | 1d | 2012-05-09 | 2012-05-09 | 401 | 48d |  |  |  |  |

| ID | WBS | Task | Duration | Start | Finish | Predecessors | Total slack | Free slack | Constraint | Resources | Work |
| --- | --- | --- | --- | --- | --- | --- | --- | --- | --- | --- | --- |
| 403 | 1.4.2.2.1.1.1.2 | **酒店预订** | 3d | 2012-05-10 | 2012-05-14 |  | 45d |  |  |  | 96h |
| 404 | 1.4.2.2.1.1.1.2.1 | **酒店预订UI部分** | 3d | 2012-05-10 | 2012-05-14 |  | 45d |  |  | 陈成; 吴波 | 48h |
| 405 | 1.4.2.2.1.1.1.2.1.1 | 酒店订单界面（机票订单） | 1d | 2012-05-10 | 2012-05-10 |  | 45d | 0d | start no earlier than 2012-05-10 |  |  |
| 406 | 1.4.2.2.1.1.1.2.1.2 | 酒店订单的详细信息界面 | 1d | 2012-05-11 | 2012-05-11 | 405 | 45d | 0d |  |  |  |
| 407 | 1.4.2.2.1.1.1.2.1.3 | 酒店预订界面和第三方界面 | 1d | 2012-05-14 | 2012-05-14 | 406 | 45d |  |  |  |  |
| 408 | 1.4.2.2.1.1.1.2.2 | **酒店预订接口部分** | 3d | 2012-05-10 | 2012-05-14 |  | 45d |  |  | 雷斌; 张磊 | 48h |
| 409 | 1.4.2.2.1.1.1.2.2.1 | 获得酒店相关信息 | 1d | 2012-05-10 | 2012-05-10 |  | 45d | 0d | start no earlier than 2012-05-10 |  |  |
| 410 | 1.4.2.2.1.1.1.2.2.2 | 酒店预订 | 1d | 2012-05-11 | 2012-05-11 | 409 | 45d | 0d |  |  |  |
| 411 | 1.4.2.2.1.1.1.2.2.3 | 取消预订 | 1d | 2012-05-14 | 2012-05-14 | 410 | 45d |  |  |  |  |
| 412 | 1.4.2.2.1.1.1.3 | **差旅申请** | 15d | 2012-05-07 | 2012-05-25 |  | 36d |  |  |  | 256h |
| 413 | 1.4.2.2.1.1.1.3.1 | **差旅申请UI部分** | 7d | 2012-05-07 | 2012-05-15 |  | 44d |  |  | 曹桐军; 吴波 | 112h |
| 414 | 1.4.2.2.1.1.1.3.1.1 | 差旅申请表界面 | 1d | 2012-05-07 | 2012-05-07 |  | 44d | 0d | start no earlier than 2012-05-07 |  |  |
| 415 | 1.4.2.2.1.1.1.3.1.2 | 企业差旅申请表界面展现 | 1d | 2012-05-08 | 2012-05-08 | 414 | 44d | 0d |  |  |  |
| 416 | 1.4.2.2.1.1.1.3.1.3 | 企业差旅政策展现 | 1d | 2012-05-09 | 2012-05-09 | 415 | 44d | 0d |  |  |  |
| 417 | 1.4.2.2.1.1.1.3.1.4 | 待审批差旅信息表界面展现 | 1d | 2012-05-10 | 2012-05-10 | 416 | 44d | 0d |  |  |  |
| 418 | 1.4.2.2.1.1.1.3.1.5 | 单条差旅信息详情展现 | 1d | 2012-05-11 | 2012-05-11 | 417 | 44d | 0d |  |  |  |
| 419 | 1.4.2.2.1.1.1.3.1.6 | 行程界面展现 | 1d | 2012-05-14 | 2012-05-14 | 418 | 44d | 0d |  |  |  |
| 420 | 1.4.2.2.1.1.1.3.1.7 | 修改行程界面展现 | 1d | 2012-05-15 | 2012-05-15 | 419 | 44d |  |  |  |  |
| 421 | 1.4.2.2.1.1.1.3.2 | **差旅申请接口部分** | 9d | 2012-05-15 | 2012-05-25 |  | 36d |  |  | 雷斌; 张磊 | 144h |
| 422 | 1.4.2.2.1.1.1.3.2.1 | 提交差旅申请表 | 1d | 2012-05-15 | 2012-05-15 |  | 36d | 0d | start no earlier than 2012-05-15 |  |  |
| 423 | 1.4.2.2.1.1.1.3.2.2 | 获取差旅申请表 | 1d | 2012-05-16 | 2012-05-16 | 422 | 36d | 0d |  |  |  |
| 424 | 1.4.2.2.1.1.1.3.2.3 | 撤销差旅申请表 | 1d | 2012-05-17 | 2012-05-17 | 423 | 36d | 0d |  |  |  |
| 425 | 1.4.2.2.1.1.1.3.2.4 | 获取企业差旅申请表 | 1d | 2012-05-18 | 2012-05-18 | 424 | 36d | 0d |  |  |  |
| 426 | 1.4.2.2.1.1.1.3.2.5 | 获取企业差旅政策 | 1d | 2012-05-21 | 2012-05-21 | 425 | 36d | 0d |  |  |  |
| 427 | 1.4.2.2.1.1.1.3.2.6 | 获取待审批差旅信息表 | 1d | 2012-05-22 | 2012-05-22 | 426 | 36d | 0d |  |  |  |
| 428 | 1.4.2.2.1.1.1.3.2.7 | 审批差旅信息 | 1d | 2012-05-23 | 2012-05-23 | 427 | 36d | 0d |  |  |  |
| 429 | 1.4.2.2.1.1.1.3.2.8 | 查看行程信息 | 1d | 2012-05-24 | 2012-05-24 | 428 | 36d | 0d |  |  |  |
| 430 | 1.4.2.2.1.1.1.3.2.9 | 修改行程信息 | 1d | 2012-05-25 | 2012-05-25 | 429 | 36d |  |  |  |  |

| ID | WBS | Task | Type | Duration | Start | Finish | Predecessors | Total slack | Free slack | Constraint | Resources | Work |
| --- | --- | --- | --- | --- | --- | --- | --- | --- | --- | --- | --- | --- |
| 431 | 1.4.2.2.1.1.1.4 | **个人设置（包括消息提醒？待定）** |  | 11d | 2012-05-16 | 2012-05-30 |  | 33d |  |  |  | 144h |
| 432 | 1.4.2.2.1.1.1.4.1 | **个人设置UI部分** |  | 5d | 2012-05-16 | 2012-05-22 |  | 39d |  |  | 曹桐军; 吴波 | 80h |
| 433 | 1.4.2.2.1.1.1.4.1.1 | 个人设置界面 |  | 1d | 2012-05-16 | 2012-05-16 |  | 39d | 0d | start no earlier than 2012-05-16 |  |  |
| 434 | 1.4.2.2.1.1.1.4.1.2 | 修改信息 |  | 1d | 2012-05-17 | 2012-05-17 | 433 | 39d | 0d |  |  |  |
| 435 | 1.4.2.2.1.1.1.4.1.3 | 涉及的消息提醒 |  | 1d | 2012-05-18 | 2012-05-18 | 434 | 39d | 0d |  |  |  |
| 436 | 1.4.2.2.1.1.1.4.1.4 | 意见问题反馈界面 |  | 1d | 2012-05-21 | 2012-05-21 | 435 | 39d | 0d |  |  |  |
| 437 | 1.4.2.2.1.1.1.4.1.5 | 调查问卷相关界面 |  | 1d | 2012-05-22 | 2012-05-22 | 436 | 39d |  |  |  |  |
| 438 | 1.4.2.2.1.1.1.4.2 | **个人设置接口部分** |  | 4d | 2012-05-25 | 2012-05-30 |  | 33d |  |  | 雷斌; 张磊 | 64h |
| 439 | 1.4.2.2.1.1.1.4.2.1 | 获取和修改个人设置信息 |  | 1d | 2012-05-25 | 2012-05-25 |  | 33d | 0d | start no earlier than 2012-05-25 |  |  |
| 440 | 1.4.2.2.1.1.1.4.2.2 | 意见问题反馈 |  | 1d | 2012-05-28 | 2012-05-28 | 439 | 33d | 0d |  |  |  |
| 441 | 1.4.2.2.1.1.1.4.2.3 | 问卷调查 |  | 1d | 2012-05-29 | 2012-05-29 | 440 | 33d | 0d |  |  |  |
| 442 | 1.4.2.2.1.1.1.4.2.4 | 消息提醒 |  | 1d | 2012-05-30 | 2012-05-30 | 441 | 33d |  |  |  |  |
| 443 | 1.4.2.2.1.1.2 | **联调** |  | 1d | 2012-06-01 | 2012-06-01 |  | 31d |  |  |  |  |
| 444 | 1.4.2.2.1.1.2.1 | 机票预订界面接口联调 |  | 1d | 2012-06-01 | 2012-06-01 |  | 31d |  | start no earlier than 2012-06-01 |  |  |
| 445 | 1.4.2.2.1.1.2.2 | 酒店预订界面接口联调 |  | 1d | 2012-06-01 | 2012-06-01 |  | 31d |  | start no earlier than 2012-06-01 |  |  |
| 446 | 1.4.2.2.1.1.2.3 | 差旅申请界面接口联调 |  | 1d | 2012-06-01 | 2012-06-01 |  | 31d |  | start no earlier than 2012-06-01 |  |  |
| 447 | 1.4.2.2.1.1.2.4 | 个人设置部分接口界面联调 |  | 1d | 2012-06-01 | 2012-06-01 |  | 31d |  | start no earlier than 2012-06-01 |  |  |
| 448 | 1.4.2.2.1.1.3 | **修改缺陷** |  | 30d | 2012-05-07 | 2012-06-15 |  | 21d |  |  |  |  |
| 449 | 1.4.2.2.1.1.3.1 | 修改bug，优化整个代码 开发全部结束 |  | 30d | 2012-05-07 | 2012-06-15 |  | 21d |  | finish no earlier than 2012-06-15 |  |  |
| 450 | 1.4.2.2.1.2 | 产品实现 | milestone | 0d | 2012-06-15 | 2012-06-15 |  | 22d |  | start no earlier than 2012-06-15 | 吴波 |  |
| 451 | 1.4.2.2.1.3 | **iPhone客户端** |  | 20d | 2012-05-25 | 2012-06-21 |  | 17d |  |  |  |  |
| 452 | 1.4.3 | **接口开发** |  | 11d | 2012-05-25 | 2012-06-08 |  | 26d |  |  |  |  |
| 453 | 1.4.2.2.1.3.1.1 | **个人提醒** |  | 3d | 2012-05-25 | 2012-05-29 |  | 34d |  |  |  |  |
| 454 | 1.4.2.2.1.3.1.1.1 | 获取系统消息 |  | 2d | 2012-05-25 | 2012-05-28 |  | 35d |  | finish no earlier than 2012-05-28 |  |  |
| 455 | 1.4.2.2.1.3.1.1.2 | 定时巡检 |  | 2d | 2012-05-28 | 2012-05-29 |  | 34d |  | finish no earlier than 2012-05-29 |  |  |

| ID | WBS | Task | Duration | Start | Finish | Predecessors | Total slack | Free slack | Constraint |
| --- | --- | --- | --- | --- | --- | --- | --- | --- | --- |
| 456 | 1.4.2.2.1.3.1.2 | **个人设置** | 3.5d | 2012-05-29 | 2012-06-01 |  | 31.5d |  |  |
| 457 | 1.4.2.2.1.3.1.2.1 | 获取个人设置 | 2d | 2012-05-29 | 2012-05-30 |  | 33d |  | finish no earlier than 2012-05-30 |
| 458 | 1.4.2.2.1.3.1.2.2 | 修改个人设置 | 0.5d | 2012-05-30 | 2012-05-30 |  | 32d | 0.5d | start no earlier than 2012-05-30 |
| 459 | 1.4.2.2.1.3.1.2.3 | 调查问卷 | 0.5d | 2012-05-31 | 2012-05-31 | 458 | 31.5d | 0d | start no earlier than 2012-05-31 |
| 460 | 1.4.2.2.1.3.1.2.4 | 意见反馈 | 1d | 2012-05-31 | 2012-06-01 | 459 | 31.5d |  |  |
| 461 | 1.4.2.2.1.3.1.3 | **酒店机票预定接口** | 5.5d | 2012-05-25 | 2012-06-01 |  | 27.5d |  |  |
| 462 | 1.4.2.2.1.3.1.3.1 | 机票订单信息及状态 | 2d | 2012-05-25 | 2012-05-28 |  | 35d |  | finish no earlier than 2012-05-28 |
| 463 | 1.4.2.2.1.3.1.3.2 | 机票预定 | 0.5d | 2012-05-28 | 2012-05-28 |  | 26.5d | 0.5d | start no earlier than 2012-05-28 |
| 464 | 1.4.2.2.1.3.1.3.3 | 取消预定 | 0.5d | 2012-05-29 | 2012-05-29 | 463 | 26d | 0d | start no earlier than 2012-05-29 |
| 465 | 1.4.2.2.1.3.1.3.4 | 获取推荐目的地酒店信息 | 1d | 2012-05-29 | 2012-05-30 | 464 | 26d | 0d |  |
| 466 | 1.4.2.2.1.3.1.3.5 | 获取酒店订单及详情 | 1d | 2012-05-30 | 2012-05-31 | 465 | 26d | 0d |  |
| 467 | 1.4.2.2.1.3.1.3.6 | 酒店预定 | 0.5d | 2012-05-31 | 2012-05-31 | 466 | 26d | 0d |  |
| 468 | 1.4.2.2.1.3.1.3.7 | 取消预定 | 0.5d | 2012-06-01 | 2012-06-01 | 467 | 26d | 0d |  |
| 469 | 1.4.2.2.1.3.1.4 | **差旅申请** | 5.5d | 2012-06-01 | 2012-06-08 |  | 26d |  |  |
| 470 | 1.4.2.2.1.3.1.4.1 | 提交差旅申请表 | 0.5d | 2012-06-01 | 2012-06-01 | 468 | 26d | 0d |  |
| 471 | 1.4.2.2.1.3.1.4.2 | 获取差旅申请表 | 1d | 2012-06-04 | 2012-06-04 | 470 | 26d | 0d |  |
| 472 | 1.4.2.2.1.3.1.4.3 | 撤销差旅申请表 | 0.5d | 2012-06-05 | 2012-06-05 | 471 | 26d | 0d |  |
| 473 | 1.4.2.2.1.3.1.4.4 | 获取企业差旅申请表 | 0.5d | 2012-06-05 | 2012-06-05 | 472 | 26d | 0d |  |
| 474 | 1.4.2.2.1.3.1.4.5 | 获取企业差旅政策 | 0.5d | 2012-06-06 | 2012-06-06 | 473 | 26d | 0d |  |
| 475 | 1.4.2.2.1.3.1.4.6 | 获取待审批差旅信息表 | 0.5d | 2012-06-06 | 2012-06-06 | 474 | 26d | 0d |  |
| 476 | 1.4.2.2.1.3.1.4.7 | 审批差旅信息 | 1d | 2012-06-07 | 2012-06-07 | 475 | 26d | 0d |  |
| 477 | 1.4.2.2.1.3.1.4.8 | 查看行程信息 | 0.5d | 2012-06-08 | 2012-06-08 | 476 | 26d | 0d |  |
| 478 | 1.4.2.2.1.3.1.4.9 | 修改行程信息 | 0.5d | 2012-06-08 | 2012-06-08 | 477 | 26d |  |  |
| 479 | 1.4.4 | **界面开发** | 11d | 2012-05-25 | 2012-06-08 |  | 26d |  |  |
| 480 | 1.4.2.2.1.3.2.1 | **个人提醒** | 2d | 2012-05-25 | 2012-05-28 |  | 35d |  |  |
| 481 | 1.4.2.2.1.3.2.1.1 | 系统消息提醒 | 2d | 2012-05-25 | 2012-05-28 |  | 35d |  | finish no earlier than 2012-05-28 |

| ID | WBS | Task | Type | Duration | Start | Finish | Predecessors | Total slack | Free slack | Constraint | Resources |
| --- | --- | --- | --- | --- | --- | --- | --- | --- | --- | --- | --- |
| 482 | 1.4.2.2.1.3.2.2 | **个人设置** |  | 3d | 2012-05-28 | 2012-05-30 |  | 27d |  |  |  |
| 483 | 1.4.2.2.1.3.2.2.1 | 个人设置界面展现 |  | 2d | 2012-05-28 | 2012-05-29 |  | 34d |  | finish no earlier than 2012-05-29 |  |
| 484 | 1.4.2.2.1.3.2.2.2 | 修改个人设置界面 |  | 2d | 2012-05-29 | 2012-05-30 |  | 26d | 0d | finish no earlier than 2012-05-30 |  |
| 485 | 1.4.2.2.1.3.2.3 | **酒店机票预定界面** |  | 11d | 2012-05-25 | 2012-06-08 |  | 26d |  |  |  |
| 486 | 1.4.2.2.1.3.2.3.1 | 订单界面展现 |  | 2d | 2012-05-25 | 2012-05-28 |  | 35d |  | finish no earlier than 2012-05-28 |  |
| 487 | 1.4.2.2.1.3.2.3.2 | 机票订单详情展现 |  | 2d | 2012-05-28 | 2012-05-29 |  | 34d |  | finish no earlier than 2012-05-29 |  |
| 488 | 1.4.2.2.1.3.2.3.3 | 酒店订单详情展现 |  | 2d | 2012-05-29 | 2012-05-30 |  | 33d |  | finish no earlier than 2012-05-30 |  |
| 489 | 1.4.2.2.1.3.2.3.4 | 酒店预定界面 |  | 2d | 2012-05-30 | 2012-05-31 |  | 32d |  | finish no earlier than 2012-05-31 |  |
| 490 | 1.4.2.2.1.3.2.3.5 | 机票预定界面 |  | 2d | 2012-05-31 | 2012-06-01 |  | 31d |  | finish no earlier than 2012-06-01 |  |
| 491 | 1.4.2.2.1.3.2.3.6 | 第三方支付接口及界面 |  | 6d | 2012-06-01 | 2012-06-08 |  | 26d |  | finish no earlier than 2012-06-08 |  |
| 492 | 1.4.2.2.1.3.2.4 | **差旅申请界面** |  | 7d | 2012-05-31 | 2012-06-08 |  | 26d |  |  |  |
| 493 | 1.4.2.2.1.3.2.4.1 | 差旅申请表界面 |  | 1d | 2012-05-31 | 2012-05-31 | 484 | 26d | 0d |  |  |
| 494 | 1.4.2.2.1.3.2.4.2 | 企业差旅申请表界面展现 |  | 1d | 2012-06-01 | 2012-06-01 | 493 | 26d | 0d |  |  |
| 495 | 1.4.2.2.1.3.2.4.3 | 企业差旅政策展现 |  | 1d | 2012-06-04 | 2012-06-04 | 494 | 26d | 0d |  |  |
| 496 | 1.4.2.2.1.3.2.4.4 | 待审批差旅信息表界面展现 |  | 1d | 2012-06-05 | 2012-06-05 | 495 | 26d | 0d |  |  |
| 497 | 1.4.2.2.1.3.2.4.5 | 单条差旅信息详情展现 |  | 1d | 2012-06-06 | 2012-06-06 | 496 | 26d | 0d |  |  |
| 498 | 1.4.2.2.1.3.2.4.6 | 行程界面展现 |  | 1d | 2012-06-07 | 2012-06-07 | 497 | 26d | 0d |  |  |
| 499 | 1.4.2.2.1.3.2.4.7 | 修改行程界面展现 |  | 1d | 2012-06-08 | 2012-06-08 | 498 | 26d |  |  |  |
| 500 | 1.4.2 | **界面接口联调** |  | 5d | 2012-06-08 | 2012-06-14 |  | 17d |  |  |  |
| 501 | 1.4.2.2.1.3.3.1 | 个人提醒模块 |  | 2d | 2012-06-08 | 2012-06-11 |  | 17d | 0d | finish no earlier than 2012-06-11 |  |
| 502 | 1.4.2.2.1.3.3.2 | 个人设置模块 |  | 1d | 2012-06-12 | 2012-06-12 | 501 | 17d | 0d |  |  |
| 503 | 1.4.2.2.1.3.3.3 | 酒店机票预定模块 |  | 1d | 2012-06-13 | 2012-06-13 | 502 | 17d | 0d |  |  |
| 504 | 1.4.2.2.1.3.3.4 | 差旅申请模块 |  | 1d | 2012-06-14 | 2012-06-14 | 503 | 17d | 0d |  |  |
| 505 | 1.4.2.2.1.3.4 | **缺陷修改** |  | 5d | 2012-06-15 | 2012-06-21 |  | 17d |  |  |  |
| 506 | 1.4.2.2.1.3.4.1 | 迭代二阶段bug进行修改 |  | 5d | 2012-06-15 | 2012-06-21 | 504 | 17d |  |  |  |
| 507 | 1.4.2.2.1.4 | 产品实现 | milestone | 0d | 2012-06-21 | 2012-06-21 |  | 17d |  | finish no earlier than 2012-06-21 | 陈栎 |

| ID | WBS | Task | Type | Duration | Start | Finish | Predecessors | Total slack | Free slack | Constraint | Resources | Work |
| --- | --- | --- | --- | --- | --- | --- | --- | --- | --- | --- | --- | --- |
| 508 | 1.4.2.2.2 | **报表pad产品** |  | 35d? | 2012-05-10 | 2012-06-27 |  | 13d |  |  |  | 656h |
| 509 | 1.4.2.2.2.1 | **Android客户端** |  | 27d? | 2012-05-10 | 2012-06-15 |  | 21d |  |  |  | 432h |
| 510 | 1.4.2.2.2.1.1 | **实现** |  | 27d | 2012-05-10 | 2012-06-15 |  | 21d |  |  |  | 432h |
| 511 | 1.4.2.2.2.1.1.1 | **报表** |  | 27d | 2012-05-10 | 2012-06-15 |  | 21d |  |  | 龙垄; 张磊 | 432h |
| 512 | 1.4.2.2.2.1.1.1.1 | **报表模块UI部分** |  | 27d | 2012-05-10 | 2012-06-15 |  | 21d |  |  |  |  |
| 513 | 1.4.2.2.2.1.1.1.1.1 | 企业历史差旅数据展现 |  | 9d | 2012-05-10 | 2012-05-22 |  | 21d | 0d | finish no earlier than 2012-05-22 |  |  |
| 514 | 1.4.2.2.2.1.1.1.1.2 | 企业数据统计报表展现 |  | 6d | 2012-05-23 | 2012-05-30 | 513 | 21d | 0d |  |  |  |
| 515 | 1.4.2.2.2.1.1.1.1.3 | 企业数据走势图展现 |  | 6d | 2012-05-31 | 2012-06-07 | 514 | 21d | 0d |  |  |  |
| 516 | 1.4.2.2.2.1.1.1.1.4 | 企业差旅政策展现 |  | 6d | 2012-06-08 | 2012-06-15 | 515 | 21d |  |  |  |  |
| 517 | 1.4.2.2.2.1.1.1.2 | **报表模块接口部分** |  | 20d | 2012-05-10 | 2012-06-06 |  | 28d |  |  |  |  |
| 518 | 1.4.2.2.2.1.1.1.2.1 | 获取企业历史差旅数据 |  | 5d | 2012-05-10 | 2012-05-16 |  | 37d | 3d | finish no earlier than 2012-05-16 |  |  |
| 519 | 1.4.2.2.2.1.1.1.2.2 | 获取企业数据统计报表 |  | 2d | 2012-05-22 | 2012-05-23 | 518 | 34d | 1d | finish no earlier than 2012-05-23 |  |  |
| 520 | 1.4.2.2.2.1.1.1.2.3 | 获取企业数据走势图 |  | 2d | 2012-05-25 | 2012-05-28 | 519 | 33d | 5d | finish no earlier than 2012-05-28 |  |  |
| 521 | 1.4.2.2.2.1.1.1.2.4 | 获取企业差旅政策 |  | 2d | 2012-06-05 | 2012-06-06 | 520 | 28d |  | finish no earlier than 2012-06-06 |  |  |
| 522 | 1.4.2.2.2.1.2 | **连调** |  | 7d? | 2012-06-07 | 2012-06-15 |  | 21d |  |  |  |  |
| 523 | 1.4.2.2.2.1.2.1 | 报表模块 |  | 7d? | 2012-06-07 | 2012-06-15 |  | 21d |  | finish no earlier than 2012-06-15 |  |  |
| 524 | 1.4.2.2.2.1.3 | **修改缺陷** |  | 24d? | 2012-05-15 | 2012-06-15 |  | 21d |  |  |  |  |
| 525 | 1.4.2.2.2.1.3.1 | 缺陷修改 |  | 24d? | 2012-05-15 | 2012-06-15 |  | 21d |  | finish no earlier than 2012-06-15 |  |  |
| 526 | 1.4.2.2.2.2 | 产品实现 | milestone | 0d | 2012-06-15 | 2012-06-15 |  | 22d |  | start no earlier than 2012-06-15 | 吴波 |  |
| 527 | 1.4.2.2.2.3 | **iPhone客户端** |  | 28d | 2012-05-21 | 2012-06-27 |  | 13d |  |  |  | 224h |
| 528 | 1.4.2.2.2.3.1 | 修改优化 |  | 28d | 2012-05-21 | 2012-06-27 |  | 13d |  | finish no earlier than 2012-06-27 | 陈栎 | 224h |
| 529 | 1.4.3 | **迭代3** |  | 4d | 2012-06-25 | 2012-06-28 |  | 12d |  |  |  | 160h |
| 530 | 1.4.3.1 | iOS端验收测试bug修改 |  | 4d | 2012-06-25 | 2012-06-28 |  | 12d |  | finish no earlier than 2012-06-28 | 陈栎 | 32h |
| 531 | 1.4.3.2 | Android端验收测试bug修改 |  | 4d | 2012-06-25 | 2012-06-28 |  | 12d |  | start no earlier than 2012-06-25 | 吴波 | 32h |
| 532 | 1.4.3.3 | iPad报表验收测试bug修改 |  | 4d | 2012-06-25 | 2012-06-28 |  | 12d |  | start no earlier than 2012-06-25 | 陈栎 | 32h |
| 533 | 1.4.3.4 | Android Pad报表验收测试bug修改 |  | 4d | 2012-06-25 | 2012-06-28 |  | 12d |  | start no earlier than 2012-06-25 | 吴波 | 32h |
| 534 | 1.4.3.5 | 平台侧验收测试bug修改 |  | 4d | 2012-06-25 | 2012-06-28 |  | 12d |  | start no earlier than 2012-06-25 | 沈航 | 32h |

| ID | WBS | Task | Type | Duration | Start | Finish | Predecessors | Total slack | Free slack | Constraint | Resources | Work |
| --- | --- | --- | --- | --- | --- | --- | --- | --- | --- | --- | --- | --- |
| 535 | 1.5 | **产品测试** |  | 58d | 2012-04-12 | 2012-06-29 |  | 11d |  |  |  | 1656h |
| 536 | 1.5.1 | **迭代1-编写测试用例** |  | 22d | 2012-04-12 | 2012-05-10 |  | 47d |  |  |  | 192h |
| 537 | 1.5.1.1 | 定制测试计划 |  | 1d | 2012-04-12 | 2012-04-12 | 19 | 68d |  | finish no earlier than 2012-04-11 | 王子楠 | 8h |
| 538 | 1.5.1.2 | 编写测试用例 |  | 20d | 2012-04-12 | 2012-05-08 |  | 47d | 0d | finish no earlier than 2012-05-08 | 王子楠 | 160h |
| 539 | 1.5.1.3 | 用例评审及结果 |  | 2d | 2012-05-09 | 2012-05-10 | 538 | 47d |  | start no earlier than 2012-04-24 | 王子楠 | 16h |
| 540 | 1.5.1.4 | 产出测试用例文档 |  | 1d | 2012-05-08 | 2012-05-08 |  | 49d |  | finish no earlier than 2012-05-08 | 王子楠 | 8h |
| 541 | 1.5.1.5 | 完成迭代1 | milestone | 0d | 2012-05-08 | 2012-05-08 |  | 49d |  | finish no earlier than 2012-05-08 | 王子楠 |  |
| 542 | 1.5.2 | **迭代2-功能、集成测试** |  | 39d | 2012-05-04 | 2012-06-27 |  | 13d |  |  |  | 800h |
| 543 | 1.5.2.1 | 执行用例 |  | 39d | 2012-05-04 | 2012-06-27 |  | 13d |  | finish no earlier than 2012-06-27 | 王子楠 | 312h |
| 544 | 1.5.2.2 | 提交跟踪bug |  | 39d | 2012-05-04 | 2012-06-27 |  | 13d |  | finish no earlier than 2012-06-27 | 王子楠 | 312h |
| 545 | 1.5.2.3 | 适配测试（Android） |  | 13d | 2012-06-11 | 2012-06-27 |  | 13d |  | finish no earlier than 2012-06-27 | 王子楠 | 104h |
| 546 | 1.5.2.4 | 系统集成测试 |  | 9d | 2012-06-15 | 2012-06-27 |  | 13d |  | finish no earlier than 2012-06-27 | 王子楠 | 72h |
| 547 | 1.5.2.5 | 完成迭代2 | milestone | 0d | 2012-06-27 | 2012-06-27 |  | 13d |  | finish no earlier than 2012-06-27 | 王子楠 |  |
| 548 | 1.5.3 | **迭代3-平台侧性能测试** |  | 20d | 2012-05-21 | 2012-06-15 |  | 21d |  |  |  | 616h |
| 549 | 1.5.3.1 | 压力测试 |  | 18d | 2012-05-21 | 2012-06-13 |  | 23d |  | start no earlier than 2012-05-21 | 王子楠 | 144h |
| 550 | 1.5.3.2 | 容量测试 |  | 18d | 2012-05-21 | 2012-06-13 |  | 23d |  | start no earlier than 2012-05-21 | 王子楠 | 144h |
| 551 | 1.5.3.3 | 负载测试 |  | 19d | 2012-05-21 | 2012-06-14 |  | 22d |  | finish no earlier than 2012-06-14 | 王子楠 | 152h |
| 552 | 1.5.3.4 | 并发测试 |  | 19d | 2012-05-21 | 2012-06-14 |  | 22d |  | finish no earlier than 2012-06-14 | 王子楠 | 152h |
| 553 | 1.5.3.5 | 提交测试报告 |  | 3d | 2012-06-13 | 2012-06-15 |  | 21d |  | finish no earlier than 2012-06-15 | 王子楠 | 24h |
| 554 | 1.5.3.6 | 完成迭代3 | milestone | 0d | 2012-06-15 | 2012-06-15 |  | 22d |  | start no earlier than 2012-06-15 | 王子楠 |  |
| 555 | 1.5.4 | **迭代4-验收测试** |  | 5d | 2012-06-25 | 2012-06-29 |  | 11d |  |  |  | 48h |
| 556 | 1.5.4.1 | 内部验收测试 |  | 4d | 2012-06-25 | 2012-06-28 |  | 12d |  | finish no earlier than 2012-06-28 | 王子楠 | 32h |
| 557 | 1.5.4.2 | 提交整体测试报告 |  | 1d | 2012-06-28 | 2012-06-28 |  | 11d | 0d | start no earlier than 2012-06-28 | 王子楠 | 8h |
| 558 | 1.5.4.3 | 测试报告评审 |  | 1d | 2012-06-29 | 2012-06-29 | 557 | 11d |  |  | 王子楠 | 8h |
| 559 | 1.5.4.4 | 完成迭代4 | milestone | 0d | 2012-06-29 | 2012-06-29 |  | 12d |  | start no earlier than 2012-06-29 | 王子楠 |  |

| ID | WBS | Task | Type | Duration | Start | Finish | Predecessors | Total slack | Free slack | Constraint | Resources | Work |
| --- | --- | --- | --- | --- | --- | --- | --- | --- | --- | --- | --- | --- |
| 560 | 1.6 | **产品交付** |  | 59d | 2012-04-13 | 2012-07-03 |  | 8d |  |  |  | 112h |
| 561 | 1.6.1 | **文档交付** |  | 56d | 2012-04-13 | 2012-06-29 |  | 11d |  |  |  |  |
| 562 | 1.6.1.1 | 需求功能分解表 | milestone | 0d | 2012-04-13 | 2012-04-13 |  | 67d |  | finish no earlier than 2012-04-13 | 杨敏 |  |
| 563 | 1.6.1.2 | 产品设计文档 | milestone | 0d | 2012-05-08 | 2012-05-08 |  | 49d |  | finish no earlier than 2012-05-08 | 刘佳 |  |
| 564 | 1.6.1.3 | 高保真产出 | milestone | 0d | 2012-05-31 | 2012-05-31 |  | 33d |  | start no earlier than 2012-05-31 | 付婷婷 |  |
| 565 | 1.6.1.4 | 测试用例文档 | milestone | 0d | 2012-05-08 | 2012-05-08 |  | 50d |  | start no earlier than 2012-05-08 | 王子楠 |  |
| 566 | 1.6.1.5 | 测试报告 | milestone | 0d | 2012-06-29 | 2012-06-29 |  | 11d |  | finish no earlier than 2012-06-29 | 王子楠 |  |
| 567 | 1.6.1.6 | 用户操作指南 | milestone | 0d | 2012-06-29 | 2012-06-29 |  | 11d |  | finish no earlier than 2012-06-29 | 王子楠 |  |
| 568 | 1.6.1.7 | 产品手册 | milestone | 0d | 2012-06-29 | 2012-06-29 |  | 11d |  | finish no earlier than 2012-06-29 | 王子楠 |  |
| 569 | 1.6.1.8 | 错误码参考 | milestone | 0d | 2012-06-29 | 2012-06-29 |  | 12d |  | start no earlier than 2012-06-29 | 王子楠 |  |
| 570 | 1.6.1.9 | 管理员操作指南 | milestone | 0d | 2012-06-29 | 2012-06-29 |  | 12d |  | start no earlier than 2012-06-29 | 王子楠 |  |
| 571 | 1.6.1.10 | 完成文档交付 | milestone | 0d | 2012-06-29 | 2012-06-29 |  | 12d |  | start no earlier than 2012-06-29 | 杨敏 |  |
| 572 | 1.6.2 | **培训** |  | 2d | 2012-07-02 | 2012-07-03 |  | 8d |  |  |  | 32h |
| 573 | 1.6.2.1 | iPhone客户端使用，发布 |  | 1d | 2012-07-02 | 2012-07-02 |  | 9d |  | start no earlier than 2012-07-02 | 王子楠 | 8h |
| 574 | 1.6.2.2 | Android客户端使用，发布 |  | 1d | 2012-07-02 | 2012-07-02 |  | 9d |  | start no earlier than 2012-07-02 | 付武钢 | 8h |
| 575 | 1.6.2.3 | 管理后台使用 |  | 1d | 2012-07-03 | 2012-07-03 |  | 8d |  | start no earlier than 2012-07-03 | 沈航 | 8h |
| 576 | 1.6.2.4 | 后台部署 |  | 1d | 2012-07-03 | 2012-07-03 |  | 8d |  | start no earlier than 2012-07-03 | 张磊磊 | 8h |
| 577 | 1.6.3 | **产品验收** |  | 5d | 2012-06-25 | 2012-06-29 |  | 11d |  |  |  | 80h |
| 578 | 1.6.3.1 | 产品安装 |  | 5d | 2012-06-25 | 2012-06-29 |  | 11d |  | finish no earlier than 2012-06-29 | 王子楠 | 40h |
| 579 | 1.6.3.2 | 产品终验 |  | 5d | 2012-06-25 | 2012-06-29 |  | 11d | 0d | finish no earlier than 2012-06-29 | 王子楠 | 40h |
| 580 | 1.6.3.3 | 完成产品验收 | milestone | 0d | 2012-06-29 | 2012-06-29 | 579 | 11d |  | finish no earlier than 2012-06-29 | 杨敏 |  |
| 581 | 1.7 | **产品上线** |  | 11d | 2012-06-30 | 2012-07-13 |  | 0d |  |  |  | 96h |
| 582 | 1.7.1 | 产品实现结束 |  | 1d | 2012-06-30 | 2012-06-30 |  | 10d |  | start no earlier than 2012-06-30 | 杨敏 | 8h |
| 583 | 1.7.2 | 产品发布 |  | 11d | 2012-06-30 | 2012-07-13 |  | 0d |  | finish no earlier than 2012-07-13 | 杨敏 | 88h |
