Schedule from MS Project, 2012-03-26 to 2012-09-25.

## Calendars

- 标准: Mon-Fri 08:00-12:00, 13:00-17:00; Sat-Sun off.

## Resources

| Resource |
| --- |
| A |
| B |
| C |
| PM |
| PM1 |
| PM2 |
| D |
| E |
| F |

## Schedule

| ID | WBS | Task | Type | Duration | Start | Finish | Predecessors | Total slack | Free slack | Constraint |
| --- | --- | --- | --- | --- | --- | --- | --- | --- | --- | --- |
| 1 | 1 | **iPhone移动商旅项目总体计划** |  | 131d? | 2012-03-26 | 2012-09-25 |  | 0d |  |  |
| 2 | 1.1 | 项目管理 |  | 2d | 2012-03-26 | 2012-03-27 |  | 47.5d | 0d | start no earlier than 2012-03-26 |
| 3 | 1.2 | **项目启动** |  | 1d? | 2012-03-28 | 2012-03-28 | 2 | 128d |  |  |
| 4 | 1.2.1 | 立项报告 |  | 1d? | 2012-03-28 | 2012-03-28 |  | 128d |  |  |
| 5 | 1.2.2 | **项目计划编写** |  | 1d? | 2012-03-28 | 2012-03-28 |  | 128d |  |  |
| 6 | 1.2.2.1 | 资源计划 |  | 1d? | 2012-03-28 | 2012-03-28 |  | 128d |  |  |
| 7 | 1.2.2.2 | 质量计划 |  | 1d? | 2012-03-28 | 2012-03-28 |  | 128d |  |  |
| 8 | 1.2.2.3 | 成本计划 |  | 1d? | 2012-03-28 | 2012-03-28 |  | 128d |  |  |
| 9 | 1.2.2.4 | 沟通计划 |  | 1d? | 2012-03-28 | 2012-03-28 |  | 128d |  |  |
| 10 | 1.2.3 | 项目启动会 |  | 1d? | 2012-03-28 | 2012-03-28 |  | 128d |  |  |
| 11 | 1.2 | **需求分析** |  | 1d? | 2012-03-28 | 2012-03-28 | 2 | 128d |  |  |
| 12 | 1.2.1 | **迭代1-需求分析** |  | 1d? | 2012-03-28 | 2012-03-28 |  | 128d |  |  |
| 13 | 1.3.1.1 | 需求规格说明书 |  | 1d? | 2012-03-28 | 2012-03-28 |  | 128d |  |  |
| 14 | 1.3.1.2 | 需求功能清单 |  | 1d? | 2012-03-28 | 2012-03-28 |  | 128d |  |  |
| 15 | 1.3.1.3 | 接口文档 |  | 1d? | 2012-03-28 | 2012-03-28 |  | 128d |  |  |
| 16 | 1.2.2 | **迭代2-需求分析** |  | 1d? | 2012-03-28 | 2012-03-28 |  | 128d |  |  |
| 17 | 1.3.2.1 | 需求规格说明书 |  | 1d? | 2012-03-28 | 2012-03-28 |  | 128d |  |  |
| 18 | 1.3.2.2 | 需求功能清单 |  | 1d? | 2012-03-28 | 2012-03-28 |  | 128d |  |  |
| 19 | 1.3.2.3 | 接口文档 |  | 1d? | 2012-03-28 | 2012-03-28 |  | 128d |  |  |
| 20 | 1.3.3 | 开发计划 |  | 1d? | 2012-03-28 | 2012-03-28 |  | 128d |  |  |
| 21 | 1.4 | 需求分析结束 | milestone | 0d | 2012-09-25 | 2012-09-25 |  | 0d |  | start no earlier than 2012-09-25 |
| 22 | 1.3 | **产品设计** |  | 10d? | 2012-03-28 | 2012-04-10 | 2 | 47.5d | 1d |  |
| 23 | 1.5.1 | **迭代1** |  | 1d? | 2012-03-28 | 2012-03-28 |  | 56.5d |  |  |
| 24 | 1.4.2.1 | UI设计文档 |  | 1d? | 2012-03-28 | 2012-03-28 |  | 56.5d |  |  |
| 25 | 1.3.2 | UE设计文档 |  | 1d? | 2012-03-28 | 2012-03-28 |  | 56.5d |  |  |
| 26 | 1.3.3 | 技术设计文档 |  | 1d? | 2012-03-28 | 2012-03-28 |  | 56.5d |  |  |

| ID | WBS | Task | Type | Duration | Start | Finish | Predecessors | Total slack | Free slack | Constraint |
| --- | --- | --- | --- | --- | --- | --- | --- | --- | --- | --- |
| 27 | 1.4.2.2 | **迭代2** |  | 10d? | 2012-03-28 | 2012-04-10 |  | 57.5d |  |  |
| 28 | 1.5.2.1 | UI设计文档 |  | 1d? | 2012-03-28 | 2012-03-28 |  | 56.5d |  |  |
| 29 | 1.5.2.2 | UE设计文档 |  | 1d? | 2012-03-28 | 2012-03-28 |  | 56.5d |  |  |
| 30 | 1.3.5 | 技术设计文档 |  | 10d | 2012-03-28 | 2012-04-10 |  | 47.5d |  |  |
| 31 | 1.6 | 产品设计结束 | milestone | 0d | 2012-04-12 | 2012-04-12 | 22 | 46.5d | 0d | start no earlier than 2012-04-12 |
| 32 | 1.4 | **产品实现** |  | 50.5d | 2012-04-12 | 2012-06-21 | 31 | 56.5d |  |  |
| 33 | 1.7.1 | **迭代1代码** |  | 31.5d | 2012-04-12 | 2012-05-25 |  | 56.5d |  |  |
| 34 | 1.7.1.1 | **接口开发** |  | 17.5d | 2012-04-12 | 2012-05-07 | 31 | 56.5d |  |  |
| 35 | 1.7.1.1.1 | **公共模块** |  | 3d | 2012-04-12 | 2012-04-16 |  | 56.5d | 0d |  |
| 36 | 1.7.1.1.1.1 | 框架搭建 |  | 1d | 2012-04-12 | 2012-04-12 | 31 | 46.5d | 0d |  |
| 37 | 1.7.1.1.1.2 | 网络请求模块 |  | 0.5d | 2012-04-13 | 2012-04-13 | 36 | 46.5d | 0d |  |
| 38 | 1.7.1.1.1.3 | 数据解析模块 |  | 0.5d | 2012-04-13 | 2012-04-13 | 37 | 46.5d | 0d |  |
| 39 | 1.7.1.1.1.4 | 公用工具 |  | 1d | 2012-04-16 | 2012-04-16 | 38 | 46.5d |  |  |
| 40 | 1.7.1.1.2 | **登录模块** |  | 3d | 2012-04-17 | 2012-04-19 |  | 56.5d |  |  |
| 41 | 1.7.1.1.2.1 | 用户登录 |  | 1d | 2012-04-17 | 2012-04-17 | 35 | 46.5d | 0d |  |
| 42 | 1.7.1.1.2.2 | 匿名用户登录 |  | 0.5d | 2012-04-18 | 2012-04-18 | 41 | 46.5d | 0d |  |
| 43 | 1.7.1.1.2.3 | 找回密码 |  | 0.5d | 2012-04-18 | 2012-04-18 | 42 | 46.5d | 0d |  |
| 44 | 1.7.1.1.2.4 | 检查新版本 |  | 1d | 2012-04-19 | 2012-04-19 | 43 | 46.5d | 0d |  |
| 45 | 1.7.1.1.3 | **个人中心** |  | 5.5d | 2012-04-20 | 2012-04-27 |  | 56.5d |  |  |
| 46 | 1.7.1.1.3.1 | 获取个人信息 |  | 1d | 2012-04-20 | 2012-04-20 | 44 | 46.5d | 0d |  |
| 47 | 1.7.1.1.3.2 | 修改个人信息 |  | 0.5d | 2012-04-23 | 2012-04-23 | 46 | 46.5d | 0d |  |
| 48 | 1.7.1.1.3.3 | 修改登录密码 |  | 0.5d | 2012-04-23 | 2012-04-23 | 47 | 46.5d | 0d |  |
| 49 | 1.7.1.1.3.4 | 修改个人提醒设置 |  | 0.5d | 2012-04-24 | 2012-04-24 | 48 | 46.5d | 0d |  |
| 50 | 1.7.1.1.3.5 | 获取个人提醒设置 |  | 0.5d | 2012-04-24 | 2012-04-24 | 49 | 46.5d | 0d |  |
| 51 | 1.7.1.1.3.6 | 获取用户里程卡 |  | 0.5d | 2012-04-25 | 2012-04-25 | 50 | 46.5d | 0d |  |
| 52 | 1.7.1.1.3.7 | 获取用户收藏 |  | 1d | 2012-04-25 | 2012-04-26 | 51 | 46.5d | 0d |  |
| 53 | 1.7.1.1.3.8 | 修改用户收藏 |  | 0.5d | 2012-04-26 | 2012-04-26 | 52 | 46.5d | 0d |  |
| 54 | 1.7.1.1.3.9 | 增加用户收藏 |  | 0.5d | 2012-04-27 | 2012-04-27 | 53 | 46.5d | 0d |  |

| ID | WBS | Task | Duration | Start | Finish | Predecessors | Total slack | Free slack |
| --- | --- | --- | --- | --- | --- | --- | --- | --- |
| 55 | 1.7.1.1.4 | **酒店机票查询接口** | 5d | 2012-04-27 | 2012-05-04 |  | 56.5d | 0d |
| 56 | 1.7.1.1.4.1 | 酒店查询 | 1d | 2012-04-27 | 2012-04-30 | 54 | 46.5d | 0d |
| 57 | 1.7.1.1.4.2 | 酒店详情查询 | 0.5d | 2012-04-30 | 2012-04-30 | 56 | 46.5d | 0d |
| 58 | 1.7.1.1.4.3 | 获取酒店位置图 | 1d | 2012-05-01 | 2012-05-01 | 57 | 46.5d | 0d |
| 59 | 1.7.1.1.4.4 | 机票查询 | 1d | 2012-05-02 | 2012-05-02 | 58 | 46.5d | 0d |
| 60 | 1.7.1.1.4.5 | 机票详情查询 | 0.5d | 2012-05-03 | 2012-05-03 | 59 | 46.5d | 0d |
| 61 | 1.7.1.1.4.6 | 地图服务接口 | 1d | 2012-05-03 | 2012-05-04 | 60 | 46.5d | 0d |
| 62 | 1.7.1.1.5 | **天气预报** | 1d | 2012-05-04 | 2012-05-07 |  | 100.5d |  |
| 63 | 1.7.1.1.5.1 | 获取天气预报信息 | 1d | 2012-05-04 | 2012-05-07 | 61 | 100.5d |  |
| 64 | 1.7.1.2 | **界面开发** | 14.5d | 2012-04-17 | 2012-05-07 | 31 | 56.5d | 0d |
| 65 | 1.7.1.2.1 | **登录模块** | 4d | 2012-04-17 | 2012-04-20 | 35 | 56.5d |  |
| 66 | 1.7.1.2.1.1 | 登录界面 | 1d | 2012-04-17 | 2012-04-17 |  | 46.5d | 0d |
| 67 | 1.7.1.2.1.2 | 登录中界面 | 1d | 2012-04-18 | 2012-04-18 | 66 | 46.5d | 0d |
| 68 | 1.7.1.2.1.3 | 找回密码界面 | 0.5d | 2012-04-19 | 2012-04-19 | 67 | 46.5d | 0d |
| 69 | 1.7.1.2.1.4 | 启动界面 | 0.5d | 2012-04-19 | 2012-04-19 | 68 | 46.5d | 0d |
| 70 | 1.7.1.2.1.5 | 版本升级界面 | 1d | 2012-04-20 | 2012-04-20 | 69 | 46.5d | 0d |
| 71 | 1.7.1.2.2 | **主页界面** | 4d | 2012-04-23 | 2012-04-26 |  | 56.5d |  |
| 72 | 1.7.1.2.2.1 | 首页界面 | 4d | 2012-04-23 | 2012-04-26 | 70 | 46.5d | 0d |
| 73 | 1.7.1.2.3 | **个人中心模块** | 6.5d | 2012-04-27 | 2012-05-07 | 72 | 56.5d |  |
| 74 | 1.7.1.2.3.1 | 个人信息展现 | 1d | 2012-04-27 | 2012-04-27 |  | 56.5d | 0d |
| 75 | 1.7.1.2.3.2 | 个人信息修改 | 0.5d | 2012-04-30 | 2012-04-30 | 74 | 56.5d | 0d |
| 76 | 1.7.1.2.3.3 | 用户收藏界面展现 | 1d | 2012-04-30 | 2012-05-01 | 75 | 56.5d | 0d |
| 77 | 1.7.1.2.3.4 | 增加收藏界面展现 | 1d | 2012-05-01 | 2012-05-02 | 76 | 56.5d | 0d |
| 78 | 1.7.1.2.3.5 | 修改密码界面 | 1d | 2012-05-02 | 2012-05-03 | 77 | 56.5d | 0d |
| 79 | 1.7.1.2.3.6 | 个人提醒设置与查询界面 | 2d | 2012-05-03 | 2012-05-07 | 78 | 56.5d |  |

| ID | WBS | Task | Type | Duration | Start | Finish | Predecessors | Total slack | Free slack |
| --- | --- | --- | --- | --- | --- | --- | --- | --- | --- |
| 80 | 1.7.1.2.4 | **酒店机票查询界面** |  | 12d | 2012-04-17 | 2012-05-02 | 35 | 57d |  |
| 81 | 1.7.1.2.4.1 | 酒店查询界面 |  | 1d | 2012-04-17 | 2012-04-17 |  | 47d | 0d |
| 82 | 1.7.1.2.4.2 | 酒店查询结果展现 |  | 2d | 2012-04-18 | 2012-04-19 | 81 | 47d | 0d |
| 83 | 1.7.1.2.4.3 | 酒店位置展现 |  | 3d | 2012-04-20 | 2012-04-24 | 82 | 47d | 0d |
| 84 | 1.7.1.2.4.4 | 酒店地图服务展现 |  | 3d | 2012-04-25 | 2012-04-27 | 83 | 47d | 0d |
| 85 | 1.7.1.2.4.5 | 机票查询界面 |  | 1d | 2012-04-30 | 2012-04-30 | 84 | 47d | 0d |
| 86 | 1.7.1.2.4.6 | 机票查询结果展现 |  | 2d | 2012-05-01 | 2012-05-02 | 85 | 47d | 0d |
| 87 | 1.7.1.2.5 | **天气预报模块** |  | 2d | 2012-05-03 | 2012-05-04 |  | 57d |  |
| 88 | 1.7.1.2.5.1 | 天气预报界面 |  | 2d | 2012-05-03 | 2012-05-04 | 86 | 57d |  |
| 89 | 1.7.1.3 | **界面接口联调** |  | 5d | 2012-05-04 | 2012-05-11 |  | 56.5d | 0d |
| 90 | 1.7.1.3.1 | 登录模块联调 |  | 1d | 2012-05-07 | 2012-05-08 | 64 | 56.5d | 0d |
| 91 | 1.7.1.3.2 | 个人中心联调 |  | 2d | 2012-05-08 | 2012-05-10 | 90 | 56.5d | 0d |
| 92 | 1.7.1.3.3 | 酒店机票查询模块联调 |  | 5d | 2012-05-04 | 2012-05-11 | 55 | 56.5d |  |
| 93 | 1.7.1.3.4 | 天气预报模块联调 |  | 1d | 2012-05-10 | 2012-05-11 | 91 | 56.5d |  |
| 94 | 1.7.1.4 | 开发结束 | milestone | 0d | 2012-05-11 | 2012-05-11 | 89 | 56.5d | 0d |
| 95 | 1.7.1.5 | **缺陷修改** |  | 10d | 2012-05-11 | 2012-05-25 | 94 | 56.5d | 0d |
| 96 | 1.7.1.5.1 | 迭代一bug进行修改 |  | 10d | 2012-05-11 | 2012-05-25 |  | 46.5d |  |
| 97 | 1.7.2 | 迭代一开发结束 | milestone | 0d | 2012-05-25 | 2012-05-25 | 95 | 56.5d | 0d |
| 98 | 1.7.3 | **迭代2代码** |  | 19d | 2012-05-25 | 2012-06-21 | 97 | 56.5d |  |
| 99 | 1.4.3 | **接口开发** |  | 10.5d | 2012-05-25 | 2012-06-08 |  | 76d |  |
| 100 | 1.7.3.1.1 | **个人提醒** |  | 2d | 2012-05-25 | 2012-05-29 |  | 81.5d |  |
| 101 | 1.7.3.1.1.1 | 获取系统消息 |  | 1d | 2012-05-25 | 2012-05-28 | 97 | 81.5d | 0d |
| 102 | 1.7.3.1.1.2 | 定时巡检 |  | 1d | 2012-05-28 | 2012-05-29 | 101 | 81.5d | 0d |
| 103 | 1.7.3.1.2 | **个人设置** |  | 3d | 2012-05-29 | 2012-06-01 |  | 81.5d |  |
| 104 | 1.7.3.1.2.1 | 获取个人设置 |  | 1d | 2012-05-29 | 2012-05-30 | 102 | 81.5d | 0d |
| 105 | 1.7.3.1.2.2 | 修改个人设置 |  | 0.5d | 2012-05-30 | 2012-05-30 | 104 | 81.5d | 0d |
| 106 | 1.7.3.1.2.3 | 调查问卷 |  | 0.5d | 2012-05-31 | 2012-05-31 | 105 | 81.5d | 0d |
| 107 | 1.7.3.1.2.4 | 意见反馈 |  | 1d | 2012-05-31 | 2012-06-01 | 106 | 81.5d |  |

| ID | WBS | Task | Duration | Start | Finish | Predecessors | Total slack | Free slack |
| --- | --- | --- | --- | --- | --- | --- | --- | --- |
| 108 | 1.7.3.1.3 | **酒店机票预定接口** | 5d | 2012-05-25 | 2012-06-01 |  | 76d |  |
| 109 | 1.7.3.1.3.1 | 机票订单信息及状态 | 1d | 2012-05-25 | 2012-05-28 | 97 | 76d | 0d |
| 110 | 1.7.3.1.3.2 | 机票预定 | 0.5d | 2012-05-28 | 2012-05-28 | 109 | 76d | 0d |
| 111 | 1.7.3.1.3.3 | 取消预定 | 0.5d | 2012-05-29 | 2012-05-29 | 110 | 76d | 0d |
| 112 | 1.7.3.1.3.4 | 获取推荐目的地酒店信息 | 1d | 2012-05-29 | 2012-05-30 | 111 | 76d | 0d |
| 113 | 1.7.3.1.3.5 | 获取酒店订单及详情 | 1d | 2012-05-30 | 2012-05-31 | 112 | 76d | 0d |
| 114 | 1.7.3.1.3.6 | 酒店预定 | 0.5d | 2012-05-31 | 2012-05-31 | 113 | 76d | 0d |
| 115 | 1.7.3.1.3.7 | 取消预定 | 0.5d | 2012-06-01 | 2012-06-01 | 114 | 76d | 0d |
| 116 | 1.7.3.1.4 | **差旅申请** | 5.5d | 2012-06-01 | 2012-06-08 |  | 76d |  |
| 117 | 1.7.3.1.4.1 | 提交差旅申请表 | 0.5d | 2012-06-01 | 2012-06-01 | 115 | 76d | 0d |
| 118 | 1.7.3.1.4.2 | 获取差旅申请表 | 1d | 2012-06-04 | 2012-06-04 | 117 | 76d | 0d |
| 119 | 1.7.3.1.4.3 | 撤销差旅申请表 | 0.5d | 2012-06-05 | 2012-06-05 | 118 | 76d | 0d |
| 120 | 1.7.3.1.4.4 | 获取企业差旅申请表 | 0.5d | 2012-06-05 | 2012-06-05 | 119 | 76d | 0d |
| 121 | 1.7.3.1.4.5 | 获取企业差旅政策 | 0.5d | 2012-06-06 | 2012-06-06 | 120 | 76d | 0d |
| 122 | 1.7.3.1.4.6 | 获取待审批差旅信息表 | 0.5d | 2012-06-06 | 2012-06-06 | 121 | 76d | 0d |
| 123 | 1.7.3.1.4.7 | 审批差旅信息 | 1d | 2012-06-07 | 2012-06-07 | 122 | 76d | 0d |
| 124 | 1.7.3.1.4.8 | 查看行程信息 | 0.5d | 2012-06-08 | 2012-06-08 | 123 | 76d | 0d |
| 125 | 1.7.3.1.4.9 | 修改行程信息 | 0.5d | 2012-06-08 | 2012-06-08 | 124 | 76d |  |
| 126 | 1.4.4 | **界面开发** | 10d | 2012-05-25 | 2012-06-08 | 97 | 56.5d | 0d |
| 127 | 1.7.3.2.1 | **个人提醒** | 1d | 2012-05-25 | 2012-05-28 |  | 56.5d |  |
| 128 | 1.7.3.2.1.1 | 系统消息提醒 | 1d | 2012-05-25 | 2012-05-28 | 97 | 56.5d | 0d |
| 129 | 1.7.3.2.2 | **个人设置** | 2d | 2012-05-28 | 2012-05-30 |  | 56.5d |  |
| 130 | 1.7.3.2.2.1 | 个人设置界面展现 | 1d | 2012-05-28 | 2012-05-29 | 128 | 56.5d | 0d |
| 131 | 1.7.3.2.2.2 | 修改个人设置界面 | 1d | 2012-05-29 | 2012-05-30 | 130 | 56.5d | 0d |

| ID | WBS | Task | Type | Duration | Start | Finish | Predecessors | Total slack | Free slack |
| --- | --- | --- | --- | --- | --- | --- | --- | --- | --- |
| 132 | 1.7.3.2.3 | **酒店机票预定界面** |  | 10d | 2012-05-25 | 2012-06-08 |  | 56.5d |  |
| 133 | 1.7.3.2.3.1 | 订单界面展现 |  | 1d | 2012-05-25 | 2012-05-28 | 97 | 56.5d | 0d |
| 134 | 1.7.3.2.3.2 | 机票订单详情展现 |  | 1d | 2012-05-28 | 2012-05-29 | 133 | 56.5d | 0d |
| 135 | 1.7.3.2.3.3 | 酒店订单详情展现 |  | 1d | 2012-05-29 | 2012-05-30 | 134 | 56.5d | 0d |
| 136 | 1.7.3.2.3.4 | 酒店预定界面 |  | 1d | 2012-05-30 | 2012-05-31 | 135 | 56.5d | 0d |
| 137 | 1.7.3.2.3.5 | 机票预定界面 |  | 1d | 2012-05-31 | 2012-06-01 | 136 | 56.5d | 0d |
| 138 | 1.7.3.2.3.6 | 第三方支付接口及界面 |  | 5d | 2012-06-01 | 2012-06-08 | 137 | 56.5d |  |
| 139 | 1.7.3.2.4 | **差旅申请界面** |  | 7d | 2012-05-30 | 2012-06-08 |  | 56.5d |  |
| 140 | 1.7.3.2.4.1 | 差旅申请表界面 |  | 1d | 2012-05-30 | 2012-05-31 | 131 | 56.5d | 0d |
| 141 | 1.7.3.2.4.2 | 企业差旅申请表界面展现 |  | 1d | 2012-05-31 | 2012-06-01 | 140 | 56.5d | 0d |
| 142 | 1.7.3.2.4.3 | 企业差旅政策展现 |  | 1d | 2012-06-01 | 2012-06-04 | 141 | 56.5d | 0d |
| 143 | 1.7.3.2.4.4 | 待审批差旅信息表界面展现 |  | 1d | 2012-06-04 | 2012-06-05 | 142 | 56.5d | 0d |
| 144 | 1.7.3.2.4.5 | 单条差旅信息详情展现 |  | 1d | 2012-06-05 | 2012-06-06 | 143 | 56.5d | 0d |
| 145 | 1.7.3.2.4.6 | 行程界面展现 |  | 1d | 2012-06-06 | 2012-06-07 | 144 | 56.5d | 0d |
| 146 | 1.7.3.2.4.7 | 修改行程界面展现 |  | 1d | 2012-06-07 | 2012-06-08 | 145 | 56.5d |  |
| 147 | 1.4.2 | **界面接口联调** |  | 4d | 2012-06-08 | 2012-06-14 | 126 | 56.5d | 0d |
| 148 | 1.7.3.3.1 | 个人提醒模块 |  | 1d | 2012-06-08 | 2012-06-11 | 126 | 56.5d | 0d |
| 149 | 1.7.3.3.2 | 个人设置模块 |  | 1d | 2012-06-11 | 2012-06-12 | 148 | 56.5d | 0d |
| 150 | 1.7.3.3.3 | 酒店机票预定模块 |  | 1d | 2012-06-12 | 2012-06-13 | 149 | 56.5d | 0d |
| 151 | 1.7.3.3.4 | 差旅申请模块 |  | 1d | 2012-06-13 | 2012-06-14 | 150 | 56.5d |  |
| 152 | 1.7.3.4 | 开发结束，提交测试 | milestone | 0d | 2012-06-14 | 2012-06-14 | 147 | 67.5d | 0d |
| 153 | 1.7.3.5 | **缺陷修改** |  | 5d | 2012-06-14 | 2012-06-21 |  | 67.5d | 0d |
| 154 | 1.7.3.5.1 | 迭代二阶段bug进行修改 |  | 5d | 2012-06-14 | 2012-06-21 | 152 | 67.5d |  |
| 155 | 1.7.3.6 | 迭代二开发结束 | milestone | 0d | 2012-06-21 | 2012-06-21 | 153 | 67.5d |  |

| ID | WBS | Task | Type | Duration | Start | Finish | Predecessors | Total slack | Free slack |
| --- | --- | --- | --- | --- | --- | --- | --- | --- | --- |
| 156 | 1.5 | **产品测试** |  | 56.5d | 2012-04-12 | 2012-06-29 |  | 61.5d | 0d |
| 157 | 1.4.1 | **迭代1-测试** |  | 31.5d | 2012-04-12 | 2012-05-25 |  | 86.5d |  |
| 158 | 1.4.1.1 | 迭代1-测试计划 |  | 10d | 2012-04-12 | 2012-04-25 | 31 | 88d | 0d |
| 159 | 1.5.1.2 | 迭代1-测试用例 |  | 10d | 2012-04-26 | 2012-05-09 | 158 | 88d | 0d |
| 160 | 1.5.1.3 | 迭代1-测试执行 |  | 10d | 2012-05-11 | 2012-05-25 | 94 | 86.5d |  |
| 161 | 1.5.2 | **迭代2-测试** |  | 36.5d | 2012-05-10 | 2012-06-29 |  | 61.5d |  |
| 162 | 1.5.2.1 | 迭代2-测试计划 |  | 5d | 2012-05-10 | 2012-05-16 | 159 | 88d | 0d |
| 163 | 1.5.2.2 | 迭代2-测试用例 |  | 5d | 2012-05-17 | 2012-05-23 | 162 | 88d |  |
| 164 | 1.5.2.3 | 迭代2-测试执行 |  | 11d | 2012-06-14 | 2012-06-29 | 147 | 56.5d | 0d |
| 165 | 1.9 | 产品测试结束，具备交付能力 | milestone | 0d | 2012-06-29 | 2012-06-29 | 156 | 61.5d |  |
| 166 | 1.6 | **产品交付** |  | 56.5d | 2012-04-12 | 2012-06-29 |  | 61.5d |  |
| 167 | 1.6.1 | **产品文档** |  | 20d | 2012-04-12 | 2012-05-09 |  | 98d |  |
| 168 | 1.6.1.1 | 编写用户手册 |  | 10d | 2012-04-12 | 2012-04-25 | 31 | 98d | 0d |
| 169 | 1.6.1.2 | 编写安装手册 |  | 10d | 2012-04-26 | 2012-05-09 | 168 | 98d |  |
| 170 | 1.6.2 | 产品发货 | milestone | 0d | 2012-06-29 | 2012-06-29 | 164 | 56.5d | 0d |
| 171 | 1.6.3 | **产品验收** |  | 11d | 2012-06-14 | 2012-06-29 | 147, 170 | 61.5d |  |
| 172 | 1.6.3.1 | 安装 |  | 1d | 2012-06-14 | 2012-06-15 |  | 61.5d |  |
| 173 | 1.6.3.2 | 初验 |  | 10d | 2012-06-15 | 2012-06-29 | 172 | 61.5d |  |
| 174 | 1.7 | **产品上线** |  | 5d | 2012-06-29 | 2012-07-06 | 170, 173 | 56.5d |  |
| 175 | 1.7.1 | 现场支持 |  | 5d | 2012-06-29 | 2012-07-06 |  | 56.5d |  |

Notes:
- 160: 执行测试，最终提供测试报告
- 167: 根据用户文档的要求来修改
