# 移动商旅客户端开发计划-android

Schedule from MS Project, 2012-04-12 to 2012-06-29.
微软中国

## Calendars

- 标准: Mon-Fri 08:00-12:00, 13:00-17:00; Sat-Sun off.

## Resources

| Resource |
| --- |
| 龙垄 |
| 吴波 |
| 陈成 |
| 张磊 |
| 曹桐军 |
| 雷斌 |

## Schedule

| ID | WBS | Task | Duration | Start | Finish | Predecessors | Total slack | Free slack | Constraint | Resources | Work |
| --- | --- | --- | --- | --- | --- | --- | --- | --- | --- | --- | --- |
| 1 | 1 | **移动商旅手机端开发计划** | 57d | 2012-04-12 | 2012-06-29 |  | 0d |  |  |  | 1328h |
| 2 | 1.1 | **产品实现** | 57d | 2012-04-12 | 2012-06-29 |  | 0d |  |  |  | 1328h |
| 3 | 1.1.1 | **迭代1-实现** | 20d | 2012-04-12 | 2012-05-09 |  | 37d |  |  |  | 656h |
| 4 | 1.1.1.1 | **公共** | 5d | 2012-04-12 | 2012-04-18 |  | 48d |  |  |  | 72h |
| 5 | 1.1.1.1.1 | 网络层 | 1d | 2012-04-12 | 2012-04-12 |  | 48d | 0d | start no earlier than 2012-04-12 | 雷斌; 吴波 | 16h |
| 6 | 1.1.1.1.2 | 数据解构解析 | 1d | 2012-04-13 | 2012-04-13 | 5 | 48d | 0d |  | 雷斌; 张磊 | 16h |
| 7 | 1.1.1.1.3 | 数据解构存储 | 1d | 2012-04-16 | 2012-04-16 | 6 | 48d | 0d |  | 雷斌; 曹桐军 | 16h |
| 8 | 1.1.1.1.4 | 公用工具 | 1d | 2012-04-17 | 2012-04-17 | 7 | 48d | 0d |  | 吴波; 陈成 | 16h |
| 9 | 1.1.1.1.5 | 整体框架搭建 | 1d | 2012-04-18 | 2012-04-18 | 8 | 48d | 0d |  | 吴波 | 8h |
| 10 | 1.1.1.2 | **登陆和主界面** | 5d | 2012-04-19 | 2012-04-25 | 9 | 47d |  |  |  | 112h |
| 11 | 1.1.1.2.1 | **UI界面的搭建** | 4d | 2012-04-19 | 2012-04-24 |  | 48d |  |  | 曹桐军; 吴波 | 64h |
| 12 | 1.1.1.2.1.1 | 主界面（包括闪屏） | 1d | 2012-04-23 | 2012-04-23 |  | 49d |  | start no earlier than 2012-04-21 |  |  |
| 13 | 1.1.1.2.1.2 | 用户登陆 | 1d | 2012-04-19 | 2012-04-19 |  | 48d | 0d |  |  |  |
| 14 | 1.1.1.2.1.3 | 匿名用户登陆 | 1d | 2012-04-20 | 2012-04-20 | 13 | 48d | 0d |  |  |  |
| 15 | 1.1.1.2.1.4 | 找回密码 | 1d | 2012-04-23 | 2012-04-23 | 14 | 48d | 0d |  |  |  |
| 16 | 1.1.1.2.1.5 | 版本升级 | 1d | 2012-04-24 | 2012-04-24 | 15 | 48d |  |  |  |  |
| 17 | 1.1.1.2.2 | **接口代码构建** | 3d | 2012-04-23 | 2012-04-25 |  | 47d |  |  | 雷斌; 张磊 | 48h |
| 18 | 1.1.1.2.2.1 | 登陆和匿名登陆接口 | 1d | 2012-04-23 | 2012-04-23 |  | 47d | 0d | finish no earlier than 2012-04-23 |  |  |
| 19 | 1.1.1.2.2.2 | 找回密码接口 | 1d | 2012-04-24 | 2012-04-24 | 18 | 47d | 0d |  |  |  |
| 20 | 1.1.1.2.2.3 | 检测版本接口 | 1d | 2012-04-25 | 2012-04-25 | 19 | 47d |  |  |  |  |
| 21 | 1.1.1.3 | **个人中心** | 10d | 2012-04-26 | 2012-05-09 |  | 37d |  |  |  | 224h |
| 22 | 1.1.1.3.1 | **个人中心界面构建** | 9d | 2012-04-27 | 2012-05-09 |  | 37d |  |  | 曹桐军; 吴波 | 144h |
| 23 | 1.1.1.3.1.1 | 获取个人信息 | 1d | 2012-04-27 | 2012-04-27 |  | 37d | 0d | start no earlier than 2012-04-27 |  |  |
| 24 | 1.1.1.3.1.2 | 修改个人信息 | 1d | 2012-04-30 | 2012-04-30 | 23 | 37d | 0d |  |  |  |
| 25 | 1.1.1.3.1.3 | 修改登陆密码 | 1d | 2012-05-01 | 2012-05-01 | 24 | 37d | 0d |  |  |  |
| 26 | 1.1.1.3.1.4 | 获取用户里程卡 | 1d | 2012-05-02 | 2012-05-02 | 25 | 37d | 0d |  |  |  |
| 27 | 1.1.1.3.1.5 | 获取用户收藏 | 1d | 2012-05-03 | 2012-05-03 | 26 | 37d | 0d |  |  |  |
| 28 | 1.1.1.3.1.6 | 修改用户收藏 | 1d | 2012-05-04 | 2012-05-04 | 27 | 37d | 0d |  |  |  |
| 29 | 1.1.1.3.1.7 | 增加用户收藏 | 1d | 2012-05-07 | 2012-05-07 | 28 | 37d | 0d |  |  |  |
| 30 | 1.1.1.3.1.8 | 获得个人提醒设置 | 1d | 2012-05-08 | 2012-05-08 | 29 | 37d | 0d |  |  |  |
| 31 | 1.1.1.3.1.9 | 修改个人提醒设置 | 1d | 2012-05-09 | 2012-05-09 | 30 | 37d |  |  |  |  |

| ID | WBS | Task | Duration | Start | Finish | Predecessors | Total slack | Free slack | Constraint | Resources | Work |
| --- | --- | --- | --- | --- | --- | --- | --- | --- | --- | --- | --- |
| 32 | 1.1.1.3.2 | **个人中心模块接口** | 5d | 2012-04-26 | 2012-05-02 |  | 42d |  |  | 雷斌; 张磊 | 80h |
| 33 | 1.1.1.3.2.1 | 显示个人信息 | 1d | 2012-04-26 | 2012-04-26 |  | 44d | 0d | start no earlier than 2012-04-26 |  |  |
| 34 | 1.1.1.3.2.2 | 修改个人信息 | 1d | 2012-04-27 | 2012-04-27 | 33 | 44d | 0d |  |  |  |
| 35 | 1.1.1.3.2.3 | 展示用户收藏界面 | 1d | 2012-04-30 | 2012-04-30 | 34 | 44d |  |  |  |  |
| 36 | 1.1.1.3.2.4 | 增加收藏界面 | 1d | 2012-04-30 | 2012-04-30 |  | 42d | 0d | start no earlier than 2012-04-30 |  |  |
| 37 | 1.1.1.3.2.5 | 修改密码界面 | 1d | 2012-05-01 | 2012-05-01 | 36 | 42d | 0d |  |  |  |
| 38 | 1.1.1.3.2.6 | 个人提醒设置与查询界面 | 1d | 2012-05-02 | 2012-05-02 | 37 | 42d |  |  |  |  |
| 39 | 1.1.1.4 | **天气信息** | 2d | 2012-05-03 | 2012-05-04 |  | 40d |  |  |  | 24h |
| 40 | 1.1.1.4.1 | **天气信息UI界面（主界面的部分）** | 1d | 2012-05-03 | 2012-05-03 |  | 41d |  |  | 雷斌; 吴波 | 16h |
| 41 | 1.1.1.4.1.1 | 天气信息在主界面的展示 | 1d | 2012-05-03 | 2012-05-03 |  | 41d |  | start no earlier than 2012-05-03 |  |  |
| 42 | 1.1.1.4.2 | **天气信息接口** | 1d | 2012-05-04 | 2012-05-04 |  | 40d |  |  | 雷斌 | 8h |
| 43 | 1.1.1.4.2.1 | 获取第三方的天气信息 | 1d | 2012-05-04 | 2012-05-04 |  | 40d |  | start no earlier than 2012-05-04 |  |  |
| 44 | 1.1.1.5 | **机票查询** | 6d | 2012-04-23 | 2012-04-30 |  | 44d |  |  | 曹桐军 | 144h |
| 45 | 1.1.1.5.1 | **机票查询部分界面构建** | 3d | 2012-04-23 | 2012-04-25 |  | 44d |  |  | 陈成; 吴波 | 48h |
| 46 | 1.1.1.5.1.1 | 机票信息查询界面 | 1d | 2012-04-23 | 2012-04-23 |  | 44d | 0d | start no earlier than 2012-04-23 |  |  |
| 47 | 1.1.1.5.1.2 | 机票详情信息界面 | 1d | 2012-04-24 | 2012-04-24 | 46 | 44d | 0d |  |  |  |
| 48 | 1.1.1.5.1.3 | 机票地图界面相关 | 1d | 2012-04-25 | 2012-04-25 | 47 | 44d | 0d |  |  |  |
| 49 | 1.1.1.5.2 | **机票查询部分接口层构建** | 3d | 2012-04-26 | 2012-04-30 | 48 | 44d |  |  | 雷斌; 张磊 | 48h |
| 50 | 1.1.1.5.2.1 | 机票信息查询 | 1d | 2012-04-26 | 2012-04-26 |  | 44d | 0d |  |  |  |
| 51 | 1.1.1.5.2.2 | 机票详细信息查询 | 1d | 2012-04-27 | 2012-04-27 | 50 | 44d | 0d |  |  |  |
| 52 | 1.1.1.5.2.3 | 机票地图信息接口 | 1d | 2012-04-30 | 2012-04-30 | 51 | 44d |  |  |  |  |
| 53 | 1.1.1.6 | **酒店查询** | 5d | 2012-04-26 | 2012-05-02 |  | 42d |  |  |  | 80h |
| 54 | 1.1.1.6.1 | **酒店查询模块UI的构建** | 2d | 2012-04-26 | 2012-04-27 |  | 42d |  |  | 陈成; 吴波 | 32h |
| 55 | 1.1.1.6.1.1 | 酒店查询和结果界面 | 1d | 2012-04-26 | 2012-04-26 |  | 42d | 0d | start no earlier than 2012-04-26 |  |  |
| 56 | 1.1.1.6.1.2 | 酒店位置界面和地图相关界面 | 1d | 2012-04-27 | 2012-04-27 | 55 | 42d | 0d |  |  |  |

| ID | WBS | Task | Duration | Start | Finish | Predecessors | Total slack | Free slack | Constraint | Resources | Work |
| --- | --- | --- | --- | --- | --- | --- | --- | --- | --- | --- | --- |
| 57 | 1.1.1.6.2 | **酒店查询模块接口层构建** | 3d | 2012-04-30 | 2012-05-02 | 56 | 42d |  |  | 雷斌; 张磊 | 48h |
| 58 | 1.1.1.6.2.1 | 酒店查询接口 | 1d | 2012-04-30 | 2012-04-30 |  | 42d | 0d |  |  |  |
| 59 | 1.1.1.6.2.2 | 酒店详情接口 | 1d | 2012-05-01 | 2012-05-01 | 58 | 42d | 0d |  |  |  |
| 60 | 1.1.1.6.2.3 | 酒店地理位置相关 | 1d | 2012-05-02 | 2012-05-02 | 59 | 42d |  |  |  |  |
| 61 | 1.1.2 | **迭代1-联调** | 1d | 2012-05-03 | 2012-05-03 |  | 41d |  |  |  | 80h |
| 62 | 1.1.2.1 | 登录和主界面接口联调 | 1d | 2012-05-03 | 2012-05-03 |  | 41d |  | start no earlier than 2012-05-03 | 曹桐军; 吴波 | 16h |
| 63 | 1.1.2.2 | 个人中心模块界面接口联调 | 1d | 2012-05-03 | 2012-05-03 |  | 41d |  | start no earlier than 2012-05-03 | 曹桐军; 吴波 | 16h |
| 64 | 1.1.2.3 | 天气信息界面接口联调（主界面的一部分） | 1d | 2012-05-03 | 2012-05-03 |  | 41d |  | start no earlier than 2012-05-03 | 雷斌; 吴波 | 16h |
| 65 | 1.1.2.4 | 机票查询界面接口调试 | 1d | 2012-05-03 | 2012-05-03 |  | 41d |  | start no earlier than 2012-05-03 | 陈成; 吴波 | 16h |
| 66 | 1.1.2.5 | 酒店查询界面接口联调 | 1d | 2012-05-03 | 2012-05-03 |  | 41d |  | start no earlier than 2012-05-03 | 陈成; 吴波 | 16h |
| 67 | 1.1.3 | **迭代1-修改缺陷** | 1d | 2012-05-04 | 2012-05-04 |  | 40d |  |  |  |  |
| 68 | 1.1.3.1 | 修改优化迭代1-中的明显问题 | 1d | 2012-05-04 | 2012-05-04 |  | 40d |  | start no earlier than 2012-05-04 |  |  |
| 69 | 1.1.4 | **迭代2-实现** | 18d | 2012-05-07 | 2012-05-30 |  | 22d |  |  |  | 592h |
| 70 | 1.1.4.1 | **机票预订** | 3d | 2012-05-07 | 2012-05-09 |  | 37d |  |  |  | 96h |
| 71 | 1.1.4.1.1 | **机票预订UI部分** | 3d | 2012-05-07 | 2012-05-09 |  | 37d |  |  | 陈成; 吴波 | 48h |
| 72 | 1.1.4.1.1.1 | 机票订单界面（与酒店订单可能一样） | 1d | 2012-05-07 | 2012-05-07 |  | 37d | 0d | start no earlier than 2012-05-07 |  |  |
| 73 | 1.1.4.1.1.2 | 机票订单详情界面 | 1d | 2012-05-08 | 2012-05-08 | 72 | 37d | 0d |  |  |  |
| 74 | 1.1.4.1.1.3 | 机票预订界面和第三方界面 | 1d | 2012-05-09 | 2012-05-09 | 73 | 37d |  |  |  |  |
| 75 | 1.1.4.1.2 | **机票预订接口部分** | 3d | 2012-05-07 | 2012-05-09 |  | 37d |  |  | 雷斌; 张磊 | 48h |
| 76 | 1.1.4.1.2.1 | 机票订单信息 | 1d | 2012-05-07 | 2012-05-07 |  | 37d | 0d | start no earlier than 2012-05-07 |  |  |
| 77 | 1.1.4.1.2.2 | 机票预订 | 1d | 2012-05-08 | 2012-05-08 | 76 | 37d | 0d |  |  |  |
| 78 | 1.1.4.1.2.3 | 取消预订 | 1d | 2012-05-09 | 2012-05-09 | 77 | 37d |  |  |  |  |
| 79 | 1.1.4.2 | **酒店预订** | 3d | 2012-05-10 | 2012-05-14 |  | 34d |  |  |  | 96h |
| 80 | 1.1.4.2.1 | **酒店预订UI部分** | 3d | 2012-05-10 | 2012-05-14 |  | 34d |  |  | 陈成; 吴波 | 48h |
| 81 | 1.1.4.2.1.1 | 酒店订单界面（机票订单） | 1d | 2012-05-10 | 2012-05-10 |  | 34d | 0d | start no earlier than 2012-05-10 |  |  |
| 82 | 1.1.4.2.1.2 | 酒店订单的详细信息界面 | 1d | 2012-05-11 | 2012-05-11 | 81 | 34d | 0d |  |  |  |
| 83 | 1.1.4.2.1.3 | 酒店预订界面和第三方界面 | 1d | 2012-05-14 | 2012-05-14 | 82 | 34d |  |  |  |  |

| ID | WBS | Task | Duration | Start | Finish | Predecessors | Total slack | Free slack | Constraint | Resources | Work |
| --- | --- | --- | --- | --- | --- | --- | --- | --- | --- | --- | --- |
| 84 | 1.1.4.2.2 | **酒店预订接口部分** | 3d | 2012-05-10 | 2012-05-14 |  | 34d |  |  | 雷斌; 张磊 | 48h |
| 85 | 1.1.4.2.2.1 | 获得酒店相关信息 | 1d | 2012-05-10 | 2012-05-10 |  | 34d | 0d | start no earlier than 2012-05-10 |  |  |
| 86 | 1.1.4.2.2.2 | 酒店预订 | 1d | 2012-05-11 | 2012-05-11 | 85 | 34d | 0d |  |  |  |
| 87 | 1.1.4.2.2.3 | 取消预订 | 1d | 2012-05-14 | 2012-05-14 | 86 | 34d |  |  |  |  |
| 88 | 1.1.4.3 | **差旅申请** | 15d | 2012-05-07 | 2012-05-25 |  | 25d |  |  |  | 256h |
| 89 | 1.1.4.3.1 | **差旅申请UI部分** | 7d | 2012-05-07 | 2012-05-15 |  | 33d |  |  | 曹桐军; 吴波 | 112h |
| 90 | 1.1.4.3.1.1 | 差旅申请表界面 | 1d | 2012-05-07 | 2012-05-07 |  | 33d | 0d | start no earlier than 2012-05-07 |  |  |
| 91 | 1.1.4.3.1.2 | 企业差旅申请表界面展现 | 1d | 2012-05-08 | 2012-05-08 | 90 | 33d | 0d |  |  |  |
| 92 | 1.1.4.3.1.3 | 企业差旅政策展现 | 1d | 2012-05-09 | 2012-05-09 | 91 | 33d | 0d |  |  |  |
| 93 | 1.1.4.3.1.4 | 待审批差旅信息表界面展现 | 1d | 2012-05-10 | 2012-05-10 | 92 | 33d | 0d |  |  |  |
| 94 | 1.1.4.3.1.5 | 单条差旅信息详情展现 | 1d | 2012-05-11 | 2012-05-11 | 93 | 33d | 0d |  |  |  |
| 95 | 1.1.4.3.1.6 | 行程界面展现 | 1d | 2012-05-14 | 2012-05-14 | 94 | 33d | 0d |  |  |  |
| 96 | 1.1.4.3.1.7 | 修改行程界面展现 | 1d | 2012-05-15 | 2012-05-15 | 95 | 33d |  |  |  |  |
| 97 | 1.1.4.3.2 | **差旅申请接口部分** | 9d | 2012-05-15 | 2012-05-25 |  | 25d |  |  | 雷斌; 张磊 | 144h |
| 98 | 1.1.4.3.2.1 | 提交差旅申请表 | 1d | 2012-05-15 | 2012-05-15 |  | 25d | 0d | start no earlier than 2012-05-15 |  |  |
| 99 | 1.1.4.3.2.2 | 获取差旅申请表 | 1d | 2012-05-16 | 2012-05-16 | 98 | 25d | 0d |  |  |  |
| 100 | 1.1.4.3.2.3 | 撤销差旅申请表 | 1d | 2012-05-17 | 2012-05-17 | 99 | 25d | 0d |  |  |  |
| 101 | 1.1.4.3.2.4 | 获取企业差旅申请表 | 1d | 2012-05-18 | 2012-05-18 | 100 | 25d | 0d |  |  |  |
| 102 | 1.1.4.3.2.5 | 获取企业差旅政策 | 1d | 2012-05-21 | 2012-05-21 | 101 | 25d | 0d |  |  |  |
| 103 | 1.1.4.3.2.6 | 获取待审批差旅信息表 | 1d | 2012-05-22 | 2012-05-22 | 102 | 25d | 0d |  |  |  |
| 104 | 1.1.4.3.2.7 | 审批差旅信息 | 1d | 2012-05-23 | 2012-05-23 | 103 | 25d | 0d |  |  |  |
| 105 | 1.1.4.3.2.8 | 查看行程信息 | 1d | 2012-05-24 | 2012-05-24 | 104 | 25d | 0d |  |  |  |
| 106 | 1.1.4.3.2.9 | 修改行程信息 | 1d | 2012-05-25 | 2012-05-25 | 105 | 25d |  |  |  |  |
| 107 | 1.1.4.4 | **个人设置（包括消息提醒？待定）** | 11d | 2012-05-16 | 2012-05-30 |  | 22d |  |  |  | 144h |
| 108 | 1.1.4.4.1 | **个人设置UI部分** | 5d | 2012-05-16 | 2012-05-22 |  | 28d |  |  | 曹桐军; 吴波 | 80h |
| 109 | 1.1.4.4.1.1 | 个人设置界面 | 1d | 2012-05-16 | 2012-05-16 |  | 28d | 0d | start no earlier than 2012-05-16 |  |  |
| 110 | 1.1.4.4.1.2 | 修改信息 | 1d | 2012-05-17 | 2012-05-17 | 109 | 28d | 0d |  |  |  |
| 111 | 1.1.4.4.1.3 | 涉及的消息提醒 | 1d | 2012-05-18 | 2012-05-18 | 110 | 28d | 0d |  |  |  |
| 112 | 1.1.4.4.1.4 | 意见问题反馈界面 | 1d | 2012-05-21 | 2012-05-21 | 111 | 28d | 0d |  |  |  |
| 113 | 1.1.4.4.1.5 | 调查问卷相关界面 | 1d | 2012-05-22 | 2012-05-22 | 112 | 28d |  |  |  |  |

| ID | WBS | Task | Duration | Start | Finish | Predecessors | Total slack | Free slack | Constraint | Resources | Work |
| --- | --- | --- | --- | --- | --- | --- | --- | --- | --- | --- | --- |
| 114 | 1.1.4.4.2 | **个人设置接口部分** | 4d | 2012-05-25 | 2012-05-30 |  | 22d |  |  | 雷斌; 张磊 | 64h |
| 115 | 1.1.4.4.2.1 | 获取和修改个人设置信息 | 1d | 2012-05-25 | 2012-05-25 |  | 22d | 0d | start no earlier than 2012-05-25 |  |  |
| 116 | 1.1.4.4.2.2 | 意见问题反馈 | 1d | 2012-05-28 | 2012-05-28 | 115 | 22d | 0d |  |  |  |
| 117 | 1.1.4.4.2.3 | 问卷调查 | 1d | 2012-05-29 | 2012-05-29 | 116 | 22d | 0d |  |  |  |
| 118 | 1.1.4.4.2.4 | 消息提醒 | 1d | 2012-05-30 | 2012-05-30 | 117 | 22d |  |  |  |  |
| 119 | 1.1.5 | **迭代2-联调** | 1d | 2012-06-01 | 2012-06-01 |  | 20d |  |  |  |  |
| 120 | 1.1.5.1 | 机票预订界面接口联调 | 1d | 2012-06-01 | 2012-06-01 |  | 20d |  | start no earlier than 2012-06-01 |  |  |
| 121 | 1.1.5.2 | 酒店预订界面接口联调 | 1d | 2012-06-01 | 2012-06-01 |  | 20d |  | start no earlier than 2012-06-01 |  |  |
| 122 | 1.1.5.3 | 差旅申请界面接口联调 | 1d | 2012-06-01 | 2012-06-01 |  | 20d |  | start no earlier than 2012-06-01 |  |  |
| 123 | 1.1.5.4 | 个人设置部分接口界面联调 | 1d | 2012-06-01 | 2012-06-01 |  | 20d |  | start no earlier than 2012-06-01 |  |  |
| 124 | 1.1.6 | **迭代2-修改缺陷** | 20d | 2012-06-04 | 2012-06-29 |  | 0d |  |  |  |  |
| 125 | 1.1.6.1 | 修改bug，优化整个代码 开发全部结束 | 20d | 2012-06-04 | 2012-06-29 |  | 0d |  | start no earlier than 2012-06-04 |  |  |
