Schedule from MS Project, 2012-04-19 to 2012-05-16.

## Calendars

- 标准: Mon-Fri 08:00-12:00, 13:00-17:00; Sat-Sun off.

## Resources

| Resource |
| --- |
| 王立伟 |
| 王波 |
| 李彬 |
| 唐亮 |
| 沈航 |

## Schedule

| ID | WBS | Task | Duration | Start | Finish | Total slack | Free slack | Constraint | Resources | Work |
| --- | --- | --- | --- | --- | --- | --- | --- | --- | --- | --- |
| 1 | 1 | **移动商旅平台** | 1d | 2012-04-19 | 2012-04-20 | 18.88d |  |  |  | 8h |
| 2 | 1.1 | 了解客户的底层（表结构，第三方接口情况） | 1d | 2012-04-19 | 2012-04-20 | 18.88d |  | start no earlier than 2012-04-19 | 唐亮 | 8h |
| 3 | 2 | **平台接口开发** | 19d | 2012-04-20 | 2012-05-16 | 0d |  |  |  | 448h |
| 4 | 2.1 | **用户及登录模块** | 6d | 2012-04-23 | 2012-05-01 | 4.88d | 0.88d |  | 王立伟 | 48h |
| 5 | 2.1.1 | 登录 | 6d | 2012-04-23 | 2012-05-01 | 4.88d |  | start no earlier than 2012-04-23 |  |  |
| 6 | 2.1.2 | 匿名登录，只能浏览数据 | 6d | 2012-04-23 | 2012-05-01 | 4.88d |  | start no earlier than 2012-04-23 |  |  |
| 7 | 2.1.3 | 退出登录 | 6d | 2012-04-23 | 2012-05-01 | 4.88d |  | start no earlier than 2012-04-23 |  |  |
| 8 | 2.1.4 | 修改密码 | 6d | 2012-04-23 | 2012-05-01 | 4.88d |  | start no earlier than 2012-04-23 |  |  |
| 9 | 2.1.5 | 充值密码 | 6d | 2012-04-23 | 2012-05-01 | 4.88d |  | start no earlier than 2012-04-23 |  |  |
| 10 | 2.1.6 | 获取个人信息 | 6d | 2012-04-23 | 2012-05-01 | 4.88d |  | start no earlier than 2012-04-23 |  |  |
| 11 | 2.1.7 | 修改个人信息 | 6d | 2012-04-23 | 2012-05-01 | 4.88d |  | start no earlier than 2012-04-23 |  |  |
| 12 | 2.1.8 | 获取常旅卡 | 6d | 2012-04-23 | 2012-05-01 | 4.88d |  | start no earlier than 2012-04-23 |  |  |
| 13 | 2.1.9 | 获取常旅卡类型 | 6d | 2012-04-23 | 2012-05-01 | 4.88d |  | start no earlier than 2012-04-23 |  |  |
| 14 | 2.2 | **机票航班模块** | 10d | 2012-04-23 | 2012-05-07 | 0.88d |  |  | 李彬 | 80h |
| 15 | 2.2.1 | 航班查询 | 10d | 2012-04-23 | 2012-05-07 | 0.88d |  | start no earlier than 2012-04-23 |  |  |
| 16 | 2.2.2 | 航班动态查询 | 10d | 2012-04-23 | 2012-05-07 | 0.88d |  | start no earlier than 2012-04-23 |  |  |
| 17 | 2.2.3 | 机票订单列表 | 10d | 2012-04-23 | 2012-05-07 | 0.88d |  | start no earlier than 2012-04-23 |  |  |
| 18 | 2.2.4 | 订单详情及状态 | 10d | 2012-04-23 | 2012-05-07 | 0.88d |  | start no earlier than 2012-04-23 |  |  |
| 19 | 2.2.5 | 取消订单 | 10d | 2012-04-23 | 2012-05-07 | 0.88d |  | start no earlier than 2012-04-23 |  |  |
| 20 | 2.2.6 | 机票预订 | 10d | 2012-04-23 | 2012-05-07 | 0.88d |  | start no earlier than 2012-04-23 |  |  |
| 21 | 2.3 | **酒店模块** | 10d | 2012-04-23 | 2012-05-07 | 7.88d |  |  | 唐亮 | 80h |
| 22 | 2.3.1 | 获取酒店收藏 | 10d | 2012-04-23 | 2012-05-07 | 7.88d |  | start no earlier than 2012-04-23 |  |  |
| 23 | 2.3.2 | 删除酒店收藏 | 10d | 2012-04-23 | 2012-05-07 | 7.88d |  | start no earlier than 2012-04-23 |  |  |
| 24 | 2.3.3 | 天酒店收藏 | 10d | 2012-04-23 | 2012-05-07 | 7.88d |  | start no earlier than 2012-04-23 |  |  |
| 25 | 2.3.4 | 酒店信息查询 | 10d | 2012-04-23 | 2012-05-07 | 7.88d |  | start no earlier than 2012-04-23 |  |  |
| 26 | 2.3.5 | 酒店订单列表查询 | 10d | 2012-04-23 | 2012-05-07 | 7.88d |  | start no earlier than 2012-04-23 |  |  |
| 27 | 2.3.6 | 酒店订单详情及状态 | 10d | 2012-04-23 | 2012-05-07 | 7.88d |  | start no earlier than 2012-04-23 |  |  |
| 28 | 2.3.7 | 酒店房型 | 10d | 2012-04-23 | 2012-05-07 | 7.88d |  | start no earlier than 2012-04-23 |  |  |
| 29 | 2.3.8 | 酒店价格 | 10d | 2012-04-23 | 2012-05-07 | 7.88d |  | start no earlier than 2012-04-23 |  |  |
| 30 | 2.3.9 | 酒店位置 | 10d | 2012-04-23 | 2012-05-07 | 7.88d |  | start no earlier than 2012-04-23 |  |  |
| 31 | 2.3.10 | 酒店预订 | 10d | 2012-04-23 | 2012-05-07 | 7.88d |  | start no earlier than 2012-04-23 |  |  |
| 32 | 2.3.11 | 网银支付待定 | 10d | 2012-04-23 | 2012-05-07 | 7.88d |  | start no earlier than 2012-04-23 |  |  |

| ID | WBS | Task | Duration | Start | Finish | Predecessors | Total slack | Free slack | Constraint | Resources | Work |
| --- | --- | --- | --- | --- | --- | --- | --- | --- | --- | --- | --- |
| 33 | 2.4 | **差旅审批** | 7d | 2012-05-08 | 2012-05-16 | 14 | 0d |  |  | 李彬; 唐亮 | 112h |
| 34 | 2.4.1 | 新增申请单 | 7d | 2012-05-08 | 2012-05-16 |  | 0d |  | start no earlier than 2012-05-08 |  |  |
| 35 | 2.4.2 | 查看申请单 | 7d | 2012-05-08 | 2012-05-16 |  | 0d |  | start no earlier than 2012-05-08 |  |  |
| 36 | 2.4.3 | 审批申请单 | 7d | 2012-05-08 | 2012-05-16 |  | 0d |  | start no earlier than 2012-05-08 |  |  |
| 37 | 2.4.4 | 设置代审批人 | 7d | 2012-05-08 | 2012-05-16 |  | 0d |  | start no earlier than 2012-05-08 |  |  |
| 38 | 2.4.5 | 撤销差旅申请单 | 7d | 2012-05-08 | 2012-05-16 |  | 0d |  | start no earlier than 2012-05-08 |  |  |
| 39 | 2.4.6 | 查看本企业的差旅政策 | 7d | 2012-05-08 | 2012-05-16 |  | 0d |  | start no earlier than 2012-05-08 |  |  |
| 40 | 2.4.7 | 获取企业白名单列表 | 7d | 2012-05-08 | 2012-05-16 |  | 0d |  | start no earlier than 2012-05-08 |  |  |
| 41 | 2.5 | **系统设置** | 11d | 2012-04-20 | 2012-05-04 |  | 3d | 0d |  | 王波 | 88h |
| 42 | 2.5.1 | 静态表数据 | 11d | 2012-04-20 | 2012-05-04 |  | 3d |  | start no earlier than 2012-04-20 |  |  |
| 43 | 2.5.2 | 关于我们 | 10d | 2012-04-23 | 2012-05-04 |  | 3d |  | start no earlier than 2012-04-23 |  |  |
| 44 | 2.5.3 | 检查版本 | 10d | 2012-04-23 | 2012-05-04 |  | 3d |  | start no earlier than 2012-04-23 |  |  |
| 45 | 2.5.4 | 自动检查新版本 | 10d | 2012-04-23 | 2012-05-04 |  | 3d |  | start no earlier than 2012-04-23 |  |  |
| 46 | 2.5.5 | 消息提醒设置 | 10d | 2012-04-23 | 2012-05-04 |  | 3d |  | start no earlier than 2012-04-23 |  |  |
| 47 | 2.5.6 | 新消息提醒机制 | 10d | 2012-04-23 | 2012-05-04 |  | 3d |  | start no earlier than 2012-04-23 |  |  |
| 48 | 2.5.7 | 是否显示酒店图片 | 10d | 2012-04-23 | 2012-05-04 |  | 3d |  | start no earlier than 2012-04-23 |  |  |
| 49 | 2.5.8 | 默认出发城市 | 10d | 2012-04-23 | 2012-05-04 |  | 3d |  | start no earlier than 2012-04-23 |  |  |
| 50 | 2.5.9 | 默认入住城市 | 10d | 2012-04-23 | 2012-05-04 |  | 3d |  | start no earlier than 2012-04-23 |  |  |
| 51 | 2.5.10 | 短信下行 | 10d | 2012-04-23 | 2012-05-04 |  | 3d |  | start no earlier than 2012-04-23 |  |  |
| 52 | 2.5.11 | 邮件下发 | 10d | 2012-04-23 | 2012-05-04 |  | 3d |  | start no earlier than 2012-04-23 |  |  |
| 53 | 2.5.12 | 天气查询状况 | 10d | 2012-04-23 | 2012-05-04 |  | 3d |  | start no earlier than 2012-04-23 |  |  |
| 54 | 2.6 | **反馈中心** | 5d | 2012-05-07 | 2012-05-11 | 41 | 3d |  |  | 王波 | 40h |
| 55 | 2.6.1 | 反馈提交 | 5d | 2012-05-07 | 2012-05-11 |  | 3d |  | start no earlier than 2012-05-07 |  |  |
| 56 | 2.6.2 | 调查问卷获取 | 5d | 2012-05-07 | 2012-05-11 |  | 3d |  | start no earlier than 2012-05-07 |  |  |
| 57 | 2.6.3 | 调查问卷提交 | 5d | 2012-05-07 | 2012-05-11 |  | 3d |  | start no earlier than 2012-05-07 |  |  |
| 58 | 2.6.4 | 调查问卷结果 | 5d | 2012-05-07 | 2012-05-11 |  | 3d |  | start no earlier than 2012-05-07 |  |  |

| ID | WBS | Task | Duration | Start | Finish | Predecessors | Total slack | Constraint | Resources | Work |
| --- | --- | --- | --- | --- | --- | --- | --- | --- | --- | --- |
| 59 | 3 | **报表平台** | 7d | 2012-05-02 | 2012-05-10 | 4 | 4d |  | 王立伟; 沈航 | 112h |
| 60 | 3.1 | 用户名或企业邮箱登陆 | 1d | 2012-05-02 | 2012-05-02 |  | 10d | start no earlier than 2012-05-02 |  |  |
| 61 | 3.2 | 取回密码 | 1d | 2012-05-02 | 2012-05-02 |  | 10d | start no earlier than 2012-05-02 |  |  |
| 62 | 3.3 | 获取个人信息 | 1d | 2012-05-02 | 2012-05-02 |  | 10d | start no earlier than 2012-05-02 |  |  |
| 63 | 3.4 | 修改个人信息 | 1d | 2012-05-02 | 2012-05-02 |  | 10d | start no earlier than 2012-05-02 |  |  |
| 64 | 3.5 | 修改登陆密码 | 1d | 2012-05-02 | 2012-05-02 |  | 10d | start no earlier than 2012-05-02 |  |  |
| 65 | 3.6 | 修改个人设置 | 1d | 2012-05-02 | 2012-05-02 |  | 10d | start no earlier than 2012-05-02 |  |  |
| 66 | 3.7 | 获取企业历史差旅数据 | 7d | 2012-05-02 | 2012-05-10 |  | 4d | start no earlier than 2012-05-02 |  |  |
| 67 | 3.8 | 获取企业数据统计报表 | 7d | 2012-05-02 | 2012-05-10 |  | 4d | start no earlier than 2012-05-02 |  |  |
| 68 | 3.9 | 获取企业数据走势图表 | 7d | 2012-05-02 | 2012-05-10 |  | 4d | start no earlier than 2012-05-02 |  |  |
| 69 | 3.10 | 获取企业差旅政策 | 7d | 2012-05-02 | 2012-05-10 |  | 4d | start no earlier than 2012-05-02 |  |  |
| 70 | 3.11 | 定时巡检接口 | 7d | 2012-05-02 | 2012-05-10 |  | 4d | start no earlier than 2012-05-02 |  |  |
| 71 | 3.12 | 检查新版本 | 7d | 2012-05-02 | 2012-05-10 |  | 4d | start no earlier than 2012-05-02 |  |  |
| 72 | 3.13 | 客户端信息收集，包括版本信息和行为信息 | 7d | 2012-05-02 | 2012-05-10 |  | 4d | start no earlier than 2012-05-02 |  |  |
